Schedule from MS Project, 2016-05-30 to 2016-08-12, costs in $.
BOOM

## Calendars

- Estándar: Mon-Fri 09:00-13:00, 15:00-19:00; Sat-Sun off.

## Resources

| Resource | Rate |
| --- | --- |
| Administrador de proyectos | 163.93 |
| Programador | 104 |
| Analista | 118.4 |
| tester | 109.38 |
| Diseñador | 92.64 |
| Asegurador de la calidad | 106.54 |
| Administrador de la configuracion | 108.05 |
| Cliente |  |

## Schedule

| ID | WBS | Task | Type | Duration | Start | Finish | Predecessors | Total slack | Free slack | Constraint | Resources | Work | Cost |
| --- | --- | --- | --- | --- | --- | --- | --- | --- | --- | --- | --- | --- | --- |
| 1 | 1 | **Plan preeliminar** |  | 1d | 2016-05-30 09:00 | 2016-05-30 19:00 |  | 0d |  |  |  | 8h | 1,311.44 |
| 2 | 1.1 | Generar un WBS del producto inicial |  | 1h | 2016-05-30 09:00 | 2016-05-30 10:00 |  | 53.88d | 0d | start no earlier than 2016-05-30 09:00 | Administrador de proyectos | 1h | 163.93 |
| 3 | 1.2 | Generar project charter |  | 1h | 2016-05-30 10:00 | 2016-05-30 11:00 | 2 | 53.88d | 0d |  | Administrador de proyectos | 1h | 163.93 |
| 4 | 1.3 | Plan preeliminar del proyecto |  | 6h | 2016-05-30 11:00 | 2016-05-30 19:00 | 3 | 53.88d | 0d |  | Administrador de proyectos | 6h | 983.58 |
| 5 | 1.4 | Documentos: WBS del producto inicial, project charter, plan preeliminar del proyecto | milestone, manual | 0d | 2016-05-30 09:00 | 2016-05-30 09:00 |  |  |  |  |  |  |  |
| 6 | 2 | **Nombre del proyecto** |  | 54d | 2016-05-31 09:00 | 2016-08-12 19:00 |  |  |  |  |  | 509.98h | 60,617.33 |
| 7 | 2.1 | Formación del equipo |  | 1h | 2016-05-31 09:00 | 2016-05-31 10:00 | 4 | 53.88d |  |  | Administrador de proyectos | 1h | 163.93 |
| 8 | 2.2 | **Fase UNO (Iteracion UNO)** |  | 27d | 2016-05-31 09:00 | 2016-07-06 19:00 |  |  |  |  |  | 260.3h | 30,633.62 |
| 9 | 2.2.1 | **Analisis** |  | 6.38d | 2016-06-01 09:00 | 2016-06-09 12:00 |  | 0d |  |  |  | 110.5h | 14,345.46 |
| 10 | 2.2.1.1 | **Elicitación** |  | 2.75d | 2016-06-01 09:00 | 2016-06-03 17:00 |  | 0d |  |  |  | 38h | 5,341.5 |
| 11 | 2.2.1.1.1 | Generar lista de proveeedores |  | 0.5h | 2016-06-01 09:00 | 2016-06-01 09:30 |  | 3.56d | 0d | start no earlier than 2016-06-01 09:00 | Analista | 0.5h | 59.2 |
| 12 | 2.2.1.1.2 | Evaluar provedores de requerimientos |  | 0.5h | 2016-06-01 09:30 | 2016-06-01 10:00 | 11 | 3.56d | 0d |  | Analista | 0.5h | 59.2 |
| 13 | 2.2.1.1.3 | Definición de estrategia de recoleccion de datos |  | 0.5h | 2016-06-01 10:00 | 2016-06-01 10:30 | 12 | 3.56d | 0d | finish no earlier than 2016-05-13 19:00 | Analista; Administrador de proyectos | 1h | 141.16 |
| 14 | 2.2.1.1.4 | Planear reuniones de licitacion |  | 2h | 2016-06-01 10:30 | 2016-06-01 12:30 | 13 | 3.56d | 0.56d |  | Administrador de proyectos; Analista | 4h | 564.66 |
| 15 | 2.2.1.1.5 | Identificar procesos del sistema |  | 8h | 2016-06-02 09:00 | 2016-06-02 19:00 | 14 | 3d | 0d | start no earlier than 2016-06-02 09:00 | Administrador de proyectos; Analista | 16h | 2,258.64 |
| 16 | 2.2.1.1.6 | Identificar requerimientos funcionales |  | 6h | 2016-06-03 09:00 | 2016-06-03 17:00 | 15 | 3d | 0d |  | Analista; Administrador de proyectos | 12h | 1,693.98 |
| 17 | 2.2.1.1.7 | Identificar requerimientos no funcionales |  | 2h | 2016-06-03 09:00 | 2016-06-03 11:00 | 15 | 23.75d |  |  | Analista; Administrador de proyectos | 4h | 564.66 |
| 18 | 2.2.1.1.8 | Requerimientos funcionales y no funcionales, estrategia de recoleccion de datos | milestone, manual | 0d | 2016-06-01 09:00 | 2016-06-01 09:00 |  |  |  |  |  |  |  |
| 19 | 2.2.1.2 | **Espesificación** |  | 2.25d | 2016-06-03 17:00 | 2016-06-07 19:00 |  | 0d |  |  |  | 66h | 8,187.52 |
| 20 | 2.2.1.2.1 | Evaluar los requerimientos |  | 2h | 2016-06-03 17:00 | 2016-06-03 19:00 | 16 | 3d | 0d |  | Analista | 2h | 236.8 |
| 21 | 2.2.1.2.2 | SRS |  | 16h | 2016-06-06 09:00 | 2016-06-07 19:00 | 20 | 21d |  |  | Analista; Administrador de la configuracion; Administrador de proyectos; Asegurador de la calidad | 64h | 7,950.72 |
| 22 | 2.2.1.2.3 | Documentos: SRS y la evaluacion de los requerimientos | milestone, manual | 0d | 2016-06-03 17:00 | 2016-06-03 17:00 |  |  |  |  |  |  |  |
| 23 | 2.2.1.3 | **Gestion de requerimientos** |  | 0.38d | 2016-06-09 09:00 | 2016-06-09 12:00 |  |  |  |  |  | 6.5h | 816.44 |
| 24 | 2.2.1.3.1 | Priorizar requerimientos |  | 1h | 2016-06-09 09:00 | 2016-06-09 10:00 | 20 | 0d |  |  | Analista; Administrador de proyectos | 2h | 282.33 |
| 25 | 2.2.1.3.2 | Almacenar en repositorio |  | 0.5h | 2016-06-09 10:00 | 2016-06-09 10:30 | 24 | 0.12d | 0d |  | Administrador de proyectos; Administrador de la configuracion | 1h | 135.99 |
| 26 | 2.2.1.3.3 | Asignar a desarrolladores de software |  | 2h | 2016-06-09 10:00 | 2016-06-09 12:00 | 24 | 0d |  |  | Analista | 2h | 236.8 |
| 27 | 2.2.1.3.4 | Administración de cambios de requerimientos |  | 0.5h | 2016-06-09 10:30 | 2016-06-09 11:00 | 25 | 0.12d |  |  | Administrador de la configuracion | 0.5h | 54.03 |
| 28 | 2.2.1.3.5 | Administracion de la trazabilidad de requerimientos |  | 0.5h | 2016-06-09 10:00 | 2016-06-09 10:30 | 24 | 0.19d |  |  | Administrador de la configuracion; Asegurador de la calidad | 1h | 107.3 |
| 29 | 2.2.1.3.6 | Administracion de los cambios, trazabilidad de requerimientos | milestone, manual | 0d | 2016-06-09 09:00 | 2016-06-09 09:00 |  |  |  |  |  |  |  |

Notes:
- 2: Generar WBS de referencia
- 3: Acta costitutiva que indica los involucrados
- 4: Plan de referencia
- 7: Se crea el quipo de trabajo del proyecto
- 11: Crear lista de las personas que proveeran la informacion necesaria
- 12: Calificar proeedores
- 13: Elegir una estrategia para obtener informacion para los requerimientos del sistema
- 14: Especificar en calendario las reuniones
- 15: Especificar como se lleva a cabo los procesos de la empresa
- 16: Requerimientos sobre la funcion de la aplicación
- 17: Requerimientos sobre la apariencia de la aplicación
- 20: Revision de los requerimientos más importantes
- 21: Acomodo de los requerimientos
- 24: Crear una lista en escala de los requerimientos con mayor importancia a menor
- 25: Crear un respaldo de la informacion
- 26: Repartir al grupo de trabajo los requerimientos
- 27: Control de los cambios en cuanto a los requeriientos
- 28: Tener un buen manejo de los tiempos de cada tarea

| ID | WBS | Task | Type | Duration | Start | Finish | Predecessors | Total slack | Free slack | Constraint | Resources | Work | Cost |
| --- | --- | --- | --- | --- | --- | --- | --- | --- | --- | --- | --- | --- | --- |
| 30 | 2.2.2 | **Planificación** |  | 5d | 2016-06-10 09:00 | 2016-06-16 19:00 |  |  |  |  |  | 42.5h | 5,261.83 |
| 31 | 2.2.2.1 | Definir el ciclo de vida |  | 0.5h | 2016-06-10 09:00 | 2016-06-10 09:30 | 28 | 2.5d | 0d |  | Analista; Programador; Administrador de la configuracion; Asegurador de la calidad | 2h | 218.5 |
| 32 | 2.2.2.2 | Politicas del proyecto |  | 0.5h | 2016-06-10 09:30 | 2016-06-10 10:00 | 31 | 2.5d | 0d |  | Administrador de proyectos; Administrador de la configuracion; Asegurador de la calidad | 1.5h | 189.26 |
| 33 | 2.2.2.3 | Actualizar plan del proyecto |  | 1h | 2016-06-10 10:00 | 2016-06-10 11:00 | 32 | 2.5d | 0.75d |  | Administrador de proyectos; Administrador de la configuracion; Asegurador de la calidad | 3h | 378.52 |
| 34 | 2.2.2.4 | Politicas del proyecto, plan de proyceto y ciclo de vida | milestone, manual | 0d | 2016-06-10 09:00 | 2016-06-10 09:00 |  |  |  |  |  |  |  |
| 35 | 2.2.2.5 | **Estimación** |  | 1.88d | 2016-06-13 09:00 | 2016-06-14 18:00 |  |  |  |  |  | 13h | 1,678.01 |
| 36 | 2.2.2.5.1 | Actualizar WBS/calendario |  | 0.12d | 2016-06-13 09:00 | 2016-06-13 10:00 | 33 | 1.75d |  |  | Administrador de proyectos; Administrador de la configuracion | 2h | 271.98 |
| 37 | 2.2.2.5.2 | Deccionario del WBS |  | 3h | 2016-06-15 09:00 | 2016-06-15 12:00 | 36 | 42.62d |  | start no earlier than 2016-06-15 09:00 | Administrador de proyectos; Administrador de la configuracion; Asegurador de la calidad | 9h | 1,135.56 |
| 38 | 2.2.2.5.3 | Costos |  | 1h | 2016-06-13 09:00 | 2016-06-13 10:00 | 33 | 1.75d |  |  | Administrador de proyectos; Asegurador de la calidad | 2h | 270.47 |
| 39 | 2.2.2.5.4 | Diccionario WBS y calendario | milestone, manual | 0d | 2016-06-13 09:00 | 2016-06-13 09:00 |  |  |  |  |  |  |  |
| 40 | 2.2.2.6 | **Riesgos** |  | 0.75d | 2016-06-15 09:00 | 2016-06-15 17:00 |  |  |  |  |  | 10h | 1,237.57 |
| 41 | 2.2.2.6.1 | Identificacion de los riesgos |  | 2h | 2016-06-15 09:00 | 2016-06-15 11:00 |  | 0d |  |  | Administrador de proyectos; Asegurador de la calidad | 4h | 540.94 |
| 42 | 2.2.2.6.2 | Asignación de prioridades |  | 1h | 2016-06-15 11:00 | 2016-06-15 12:00 | 41 | 0.38d |  |  | Administrador de proyectos; Asegurador de la calidad | 2h | 270.47 |
| 43 | 2.2.2.6.3 | Plan mitigación contingencia |  | 4h | 2016-06-15 11:00 | 2016-06-15 17:00 | 41 | 0d |  |  | Asegurador de la calidad | 4h | 426.16 |
| 44 | 2.2.2.6.4 | Plan de mitigacion y identificacion de riesgos | milestone, manual | 0d | 2016-06-15 09:00 | 2016-06-15 09:00 |  |  |  |  |  |  |  |
| 45 | 2.2.2.7 | **Aseguramiento de la calidad** |  | 0.38d | 2016-06-16 09:00 | 2016-06-16 12:00 |  |  |  |  |  | 13h | 1,559.98 |
| 46 | 2.2.2.7.1 | Plan de gestión de la información |  | 2h | 2016-06-16 09:00 | 2016-06-16 11:00 |  | 0d |  |  | Asegurador de la calidad; Administrador de la configuracion; Administrador de proyectos | 6h | 757.04 |
| 47 | 2.2.2.7.2 | Junta de arranque |  | 1h | 2016-06-16 11:00 | 2016-06-16 12:00 | 46 | 0d |  |  | Administrador de proyectos; Administrador de la configuracion; Analista; Asegurador de la calidad; Diseñador; Programador; tester | 7h | 802.94 |
| 48 | 2.2.2.7.3 | Plan de gestión de la información | milestone, manual | 0d | 2016-06-16 09:00 | 2016-06-16 09:00 |  |  |  |  |  |  |  |
| 49 | 2.2.3 | **Diseño** |  | 3d | 2016-06-21 09:00 | 2016-06-23 19:00 |  |  |  |  |  | 30h | 2,879.52 |
| 50 | 2.2.3.1 | Definicón de la arquitectura |  | 2h | 2016-06-21 09:00 | 2016-06-21 11:00 | 47 | 2.25d | 0d |  | Diseñador; Administrador de la configuracion; Asegurador de la calidad | 6h | 614.46 |
| 51 | 2.2.3.2 | **Diagramas UML** |  | 1.38d | 2016-06-21 09:00 | 2016-06-22 12:00 |  | 1.62d |  |  |  | 17h | 1,616.58 |
| 52 | 2.2.3.2.1 | Diagrama de caso de uso |  | 4h | 2016-06-21 09:00 | 2016-06-21 13:00 |  | 2.25d | 0d |  | Diseñador | 4h | 370.56 |
| 53 | 2.2.3.2.2 | Diagrama de secuencia |  | 2h | 2016-06-21 15:00 | 2016-06-21 17:00 | 52 | 2.25d |  |  | Diseñador | 2h | 185.28 |
| 54 | 2.2.3.2.3 | Diagrama de clases |  | 2h | 2016-06-21 11:00 | 2016-06-21 13:00 | 50 | 2.5d |  |  | Diseñador | 2h | 185.28 |
| 55 | 2.2.3.2.4 | Diagrama de componentes |  | 3h | 2016-06-22 09:00 | 2016-06-22 12:00 |  | 1.62d |  | start no earlier than 2016-06-22 09:00 | Diseñador; Asegurador de la calidad | 6h | 597.54 |
| 56 | 2.2.3.2.5 | Diagrama de despliegue |  | 3h | 2016-06-22 09:00 | 2016-06-22 12:00 |  | 1.62d |  | start no earlier than 2016-06-22 09:00 | Diseñador | 3h | 277.92 |
| 57 | 2.2.3.3 | Mapa de navegación |  | 1h | 2016-06-22 09:00 | 2016-06-22 10:00 | 50 | 1.5d | 0d | start no earlier than 2016-06-22 09:00 | Diseñador | 1h | 92.64 |
| 58 | 2.2.3.4 | Maquetación |  | 3h | 2016-06-22 10:00 | 2016-06-22 13:00 | 57 | 1.5d |  |  | Diseñador | 3h | 277.92 |
| 59 | 2.2.3.5 | Diagramas UML, mapa de navegacion y maquetacion | milestone, manual | 0d | 2016-06-21 09:00 | 2016-06-21 09:00 |  |  |  |  |  |  |  |

Notes:
- 31: Elegir ciclo de vida adecuado para el proyecto
- 32: Establecer las reglas del proyecto
- 33: Establecer formalmente el plan de proyecto
- 36: Establecer formalmente el WBS
- 37: Descripcion mejorada de las tareas
- 38: Establecer costos del proyecto
- 41: Generan lista de los posibles riesgos que pueden dar en el trayecto del proyecto
- 42: Crear lista de importancia de los riesgos
- 43: Crear plan de contingencia en caso de que ocurriese
- 46: Como se estructurara la informacion
- 47: Iniciacion del proyecto
- 50: Elegir arquitectura a implementar
- 52: Diagramas sobre el funcionamiento de la aplicion
- 53: Representacion en secuencia de lso casos de uso
- 54: Clases a crear
- 57: Estructura de la aplicación
- 58: Bocetos de la aplicación

| ID | WBS | Task | Type | Duration | Start | Finish | Predecessors | Total slack | Free slack | Constraint | Resources | Work | Cost |
| --- | --- | --- | --- | --- | --- | --- | --- | --- | --- | --- | --- | --- | --- |
| 60 | 2.2.3.6 | **Diagramas de la BD** |  | 0.38d | 2016-06-23 09:00 | 2016-06-23 12:00 |  |  |  |  |  | 3h | 277.92 |
| 61 | 2.2.3.6.1 | Diagrama E-R |  | 2h | 2016-06-23 09:00 | 2016-06-23 11:00 |  | 0d |  |  | Diseñador | 2h | 185.28 |
| 62 | 2.2.3.6.2 | Diagrama relacional |  | 1h | 2016-06-23 11:00 | 2016-06-23 12:00 | 61 | 0d |  |  | Diseñador | 1h | 92.64 |
| 63 | 2.2.3.6.3 | Diagramas de la Base de datos | milestone, manual | 0d | 2016-06-23 09:00 | 2016-06-23 09:00 |  |  |  |  |  |  |  |
| 64 | 2.2.4 | **Codificación** |  | 6d | 2016-06-27 09:00 | 2016-07-04 19:00 |  |  |  |  |  | 57.3h | 5,959.2 |
| 65 | 2.2.4.1 | Codificación de la BD |  | 2h | 2016-06-27 09:00 | 2016-06-27 11:00 | 62 | 0.69d | 0d |  | Programador | 2h | 208 |
| 66 | 2.2.4.2 | Scrip de la base de datos | manual | 1d? | 2016-06-27 09:00 | 2016-06-27 19:00 |  |  |  |  |  |  |  |
| 67 | 2.2.4.3 | **Módulo de usuarios** |  | 2d | 2016-06-27 09:00 | 2016-06-28 19:00 |  |  |  |  |  | 12.7h | 1,320.8 |
| 68 | 2.2.4.3.1 | Interfaz |  | 2h | 2016-06-27 09:00 | 2016-06-27 11:00 | 58 | 1.75d |  |  | Programador | 2h | 208 |
| 69 | 2.2.4.3.2 | Clases de usuario |  | 6h | 2016-06-27 11:00 | 2016-06-27 19:00 | 65 | 0.69d | 0d |  | Programador | 6h | 624 |
| 70 | 2.2.4.3.3 | Conexión a BD |  | 0.5h | 2016-06-28 09:00 | 2016-06-28 09:30 | 65 | 33.94d |  | start no earlier than 2016-06-28 09:00 | Programador | 0.5h | 52 |
| 71 | 2.2.4.3.4 | Insertar calzado |  | 2h | 2016-06-28 09:00 | 2016-06-28 11:00 | 69 | 0.69d | 0d | start no earlier than 2016-06-28 09:00 | Programador | 2h | 208 |
| 72 | 2.2.4.3.5 | Borrar usuario |  | 0.2h | 2016-06-28 11:00 | 2016-06-28 11:12 | 71 | 0.72d |  |  | Programador | 0.2h | 20.8 |
| 73 | 2.2.4.3.6 | Modificación de usuario |  | 0.5h | 2016-06-28 11:00 | 2016-06-28 11:30 | 71 | 0.69d |  |  | Programador | 0.5h | 52 |
| 74 | 2.2.4.3.7 | Consulta de usuarios |  | 0.5h | 2016-06-28 11:00 | 2016-06-28 11:30 | 71 | 0.69d |  |  | Programador | 0.5h | 52 |
| 75 | 2.2.4.3.8 | Reporte de usuarios |  | 1h | 2016-06-28 09:00 | 2016-06-28 10:00 | 69 | 0.88d |  |  | Programador | 1h | 104 |
| 76 | 2.2.4.3.9 | Codigo fuente de modulo de usuarios | milestone, manual | 0d | 2016-06-27 09:00 | 2016-06-27 09:00 |  |  |  |  |  |  |  |
| 77 | 2.2.4.4 | **Módulo de calzado** |  | 3d | 2016-06-30 09:00 | 2016-07-04 19:00 |  |  |  |  |  | 12.7h | 1,320.8 |
| 78 | 2.2.4.4.1 | Interfaz |  | 2h | 2016-06-30 09:00 | 2016-06-30 11:00 | 58 | 2.75d |  |  | Programador | 2h | 208 |
| 79 | 2.2.4.4.2 | Clases de calzado |  | 6h | 2016-06-30 09:00 | 2016-06-30 17:00 | 65 | 2.25d |  |  | Programador | 6h | 624 |
| 80 | 2.2.4.4.3 | Conexión a BD |  | 0.5h | 2016-07-01 09:00 | 2016-07-01 09:30 | 65 | 1.56d | 0d | start no earlier than 2016-07-01 09:00 | Programador | 0.5h | 52 |
| 81 | 2.2.4.4.4 | Insertar calzado |  | 2h | 2016-07-01 09:30 | 2016-07-01 11:30 | 80 | 1.56d | 0d |  | Programador | 2h | 208 |
| 82 | 2.2.4.4.5 | Borrar calzado |  | 0.2h | 2016-07-01 11:30 | 2016-07-01 11:42 | 81 | 1.66d |  |  | Programador | 0.2h | 20.8 |
| 83 | 2.2.4.4.6 | Modificación de calzado |  | 0.5h | 2016-07-01 11:30 | 2016-07-01 12:00 | 81 | 1.62d |  |  | Programador | 0.5h | 52 |
| 84 | 2.2.4.4.7 | Consulta de calzado |  | 0.5h | 2016-07-01 11:30 | 2016-07-01 12:00 | 81 | 1.62d |  |  | Programador | 0.5h | 52 |
| 85 | 2.2.4.4.8 | Reporte de calzado |  | 1h | 2016-07-01 11:30 | 2016-07-01 12:30 | 81 | 1.56d |  |  | Programador | 1h | 104 |
| 86 | 2.2.4.4.9 | Codigo fuente de modulo de calzad | milestone, manual | 0d | 2016-06-30 09:00 | 2016-06-30 09:00 |  |  |  |  |  |  |  |

Notes:
- 61: Relaciones entre las tablas de la base de datos
- 62: Identificadores en la base de datos sobre las tablas y sus atributos
- 65: Crear la base de datos
- 68: Codificar la interfaz
- 69: Codificar las clases del modulo
- 70: Crear la conexión a la BD
- 71: Codigo para agregar
- 72: CodIgo para borrar
- 73: Codigo para modificar
- 74: Codigo para consultar
- 75: Codigo para generar reportes
- 78: Codificar la interfaz
- 79: Codificar las clases del modulo
- 80: Crear la conexión a la BD
- 81: Codigo para agregar
- 82: CodIgo para borrar
- 83: Codigo para modificar
- 84: Codigo para consultar
- 85: Codigo para generar reportes

| ID | WBS | Task | Duration | Start | Finish | Predecessors | Total slack | Resources | Work | Cost |
| --- | --- | --- | --- | --- | --- | --- | --- | --- | --- | --- |
| 87 | 2.2.4.5 | **Módulo de login** | 0.25d | 2016-06-27 09:00 | 2016-06-27 11:00 |  | 5.75d |  | 4.5h | 468 |
| 88 | 2.2.4.5.1 | Interfaz | 2h | 2016-06-27 09:00 | 2016-06-27 11:00 |  | 5.75d | Programador | 2h | 208 |
| 89 | 2.2.4.5.2 | Clase de login | 2h | 2016-06-27 09:00 | 2016-06-27 11:00 |  | 5.75d | Programador | 2h | 208 |
| 90 | 2.2.4.5.3 | Conexión a BD | 0.5h | 2016-06-27 09:00 | 2016-06-27 09:30 |  | 5.94d | Programador | 0.5h | 52 |
| 91 | 2.2.4.6 | **Módulo de venta** | 0.75d | 2016-06-27 09:00 | 2016-06-27 17:00 |  | 5.25d |  | 12.7h | 1,320.8 |
| 92 | 2.2.4.6.1 | Interfaz | 2h | 2016-06-27 09:00 | 2016-06-27 11:00 |  | 5.75d | Programador | 2h | 208 |
| 93 | 2.2.4.6.2 | Clases de venta | 6h | 2016-06-27 09:00 | 2016-06-27 17:00 |  | 5.25d | Programador | 6h | 624 |
| 94 | 2.2.4.6.3 | Conexión a BD | 0.5h | 2016-06-27 09:00 | 2016-06-27 09:30 |  | 5.94d | Programador | 0.5h | 52 |
| 95 | 2.2.4.6.4 | Insertar venta | 2h | 2016-06-27 09:00 | 2016-06-27 11:00 |  | 5.75d | Programador | 2h | 208 |
| 96 | 2.2.4.6.5 | Borrar venta | 0.2h | 2016-06-27 09:00 | 2016-06-27 09:12 |  | 5.97d | Programador | 0.2h | 20.8 |
| 97 | 2.2.4.6.6 | Modificación de venta | 0.5h | 2016-06-27 09:00 | 2016-06-27 09:30 |  | 5.94d | Programador | 0.5h | 52 |
| 98 | 2.2.4.6.7 | Consulta de venta | 0.5h | 2016-06-27 09:00 | 2016-06-27 09:30 |  | 5.94d | Programador | 0.5h | 52 |
| 99 | 2.2.4.6.8 | Reporte de venta | 1h | 2016-06-27 09:00 | 2016-06-27 10:00 |  | 5.88d | Programador | 1h | 104 |
| 100 | 2.2.4.7 | **Módulo de clientes** | 0.75d | 2016-06-27 09:00 | 2016-06-27 17:00 |  | 5.25d |  | 12.7h | 1,320.8 |
| 101 | 2.2.4.7.1 | Interfaz | 2h | 2016-06-27 09:00 | 2016-06-27 11:00 |  | 5.75d | Programador | 2h | 208 |
| 102 | 2.2.4.7.2 | Clases de cliente | 6h | 2016-06-27 09:00 | 2016-06-27 17:00 |  | 5.25d | Programador | 6h | 624 |
| 103 | 2.2.4.7.3 | Conexión a BD | 0.5h | 2016-06-27 09:00 | 2016-06-27 09:30 |  | 5.94d | Programador | 0.5h | 52 |
| 104 | 2.2.4.7.4 | Insertar cliente | 2h | 2016-06-27 09:00 | 2016-06-27 11:00 |  | 5.75d | Programador | 2h | 208 |
| 105 | 2.2.4.7.5 | Borrar cliente | 0.2h | 2016-06-27 09:00 | 2016-06-27 09:12 |  | 5.97d | Programador | 0.2h | 20.8 |
| 106 | 2.2.4.7.6 | Modificación de cliente | 0.5h | 2016-06-27 09:00 | 2016-06-27 09:30 |  | 5.94d | Programador | 0.5h | 52 |
| 107 | 2.2.4.7.7 | Consulta de cliente | 0.5h | 2016-06-27 09:00 | 2016-06-27 09:30 |  | 5.94d | Programador | 0.5h | 52 |
| 108 | 2.2.4.7.8 | Reporte de cliente | 1h | 2016-06-27 09:00 | 2016-06-27 10:00 |  | 5.88d | Programador | 1h | 104 |
| 109 | 2.2.5 | **Pruebas** | 1d | 2016-07-06 09:00 | 2016-07-06 19:00 |  |  |  | 20h | 2,187.6 |
| 110 | 2.2.5.1 | **Caja blanca** | 0.25d | 2016-07-06 09:00 | 2016-07-06 11:00 |  | 0d |  | 20h | 2,187.6 |
| 111 | 2.2.5.1.1 | **Modulo de usuarios** | 0.25d | 2016-07-06 09:00 | 2016-07-06 11:00 |  | 0.75d |  | 4h | 437.52 |
| 112 | 2.2.5.1.1.1 | Pruebas unitarias | 2h | 2016-07-06 09:00 | 2016-07-06 11:00 | 67 | 0.75d | tester | 2h | 218.76 |
| 113 | 2.2.5.1.1.2 | Pruebas de modulo | 2h | 2016-07-06 09:00 | 2016-07-06 11:00 | 67 | 0.75d | tester | 2h | 218.76 |

Notes:
- 88: Codificar la interfaz
- 89: Codificar las clases del modulo
- 90: Crear la conexión a la BD
- 92: Codificar la interfaz
- 93: Codificar las clases del modulo
- 94: Crear la conexión a la BD
- 95: Codigo para agregar
- 96: CodIgo para borrar
- 97: Codigo para modificar
- 98: Codigo para consultar
- 99: Codigo para generar reportes
- 101: Codificar la interfaz
- 102: Codificar las clases del modulo
- 103: Crear la conexión a la BD
- 104: Codigo para agregar
- 105: CodIgo para borrar
- 106: Codigo para modificar
- 107: Codigo para consultar
- 108: Codigo para generar reportes
- 112: Realizar pruebas por unidad
- 113: Realizar pruebas por modulo codificado

| ID | WBS | Task | Type | Duration | Start | Finish | Predecessors | Total slack | Free slack | Resources | Work | Cost |
| --- | --- | --- | --- | --- | --- | --- | --- | --- | --- | --- | --- | --- |
| 114 | 2.2.5.1.2 | **Modulo de calzado** |  | 0.25d | 2016-07-06 09:00 | 2016-07-06 11:00 |  | 0.75d |  |  | 4h | 437.52 |
| 115 | 2.2.5.1.2.1 | Pruebas unitarias |  | 2h | 2016-07-06 09:00 | 2016-07-06 11:00 | 77 | 0.75d |  | tester | 2h | 218.76 |
| 116 | 2.2.5.1.2.2 | Pruebas de modulo |  | 2h | 2016-07-06 09:00 | 2016-07-06 11:00 | 77 | 0.75d |  | tester | 2h | 218.76 |
| 117 | 2.2.5.1.3 | **Modulo de login** |  | 0.25d | 2016-07-06 09:00 | 2016-07-06 11:00 |  |  |  |  | 4h | 437.52 |
| 118 | 2.2.5.1.3.1 | Pruebas unitarias | manual | 2h | 2016-07-06 09:00 | 2016-07-06 11:00 |  |  |  | tester | 2h | 218.76 |
| 119 | 2.2.5.1.3.2 | Pruebas de modulo | manual | 2h | 2016-07-06 09:00 | 2016-07-06 11:00 |  |  |  | tester | 2h | 218.76 |
| 120 | 2.2.5.1.4 | **Modulo de venta** |  | 0.25d | 2016-07-06 09:00 | 2016-07-06 11:00 |  |  |  |  | 4h | 437.52 |
| 121 | 2.2.5.1.4.1 | Pruebas unitarias | manual | 2h | 2016-07-06 09:00 | 2016-07-06 11:00 |  |  |  | tester | 2h | 218.76 |
| 122 | 2.2.5.1.4.2 | Pruebas de modulo | manual | 2h | 2016-07-06 09:00 | 2016-07-06 11:00 |  |  |  | tester | 2h | 218.76 |
| 123 | 2.2.5.1.5 | **Modulo de clientes** |  | 0.25d | 2016-07-06 09:00 | 2016-07-06 11:00 |  |  |  |  | 4h | 437.52 |
| 124 | 2.2.5.1.5.1 | Pruebas unitarias | manual | 2h | 2016-07-06 09:00 | 2016-07-06 11:00 |  |  |  | tester | 2h | 218.76 |
| 125 | 2.2.5.1.5.2 | Pruebas de modulo | manual | 2h | 2016-07-06 09:00 | 2016-07-06 11:00 |  |  |  | tester | 2h | 218.76 |
| 126 | 2.2.5.1.6 | Reporte de prubas | milestone, manual | 0d | 2016-07-06 09:00 | 2016-07-06 09:00 |  |  |  | tester |  |  |
| 127 | 2.3 | **Fase DOS (Iteracion DOS)** |  | 18d | 2016-07-11 09:00 | 2016-08-03 19:00 |  |  |  |  | 220.68h | 26,327.63 |
| 128 | 2.3.1 | **Analisis** |  | 6d | 2016-07-11 09:00 | 2016-07-18 19:00 |  |  |  |  | 104.5h | 13,521.24 |
| 129 | 2.3.1.1 | **Elicitación** |  | 2d | 2016-07-11 09:00 | 2016-07-12 19:00 |  |  |  |  | 32h | 4,517.28 |
| 130 | 2.3.1.1.1 | Identificar procesos del sistema |  | 8h | 2016-07-11 09:00 | 2016-07-11 19:00 |  | 0.25d | 0d | Administrador de proyectos; Analista | 16h | 2,258.64 |
| 131 | 2.3.1.1.2 | Identificar requerimientos funcionales |  | 6h | 2016-07-12 09:00 | 2016-07-12 17:00 | 130 | 0.25d |  | Analista; Administrador de proyectos | 12h | 1,693.98 |
| 132 | 2.3.1.1.3 | Identificar requerimientos no funcionales |  | 2h | 2016-07-12 09:00 | 2016-07-12 11:00 | 133 | 0.75d |  | Analista; Administrador de proyectos | 4h | 564.66 |
| 133 | 2.3.1.1.4 | Requerimientos funcionales y no funcionales | manual | 1d | 2016-07-11 09:00 | 2016-07-11 19:00 |  |  |  |  |  |  |
| 134 | 2.3.1.2 | **Espesificación** |  | 3d | 2016-07-13 09:00 | 2016-07-15 19:00 |  |  |  |  | 66h | 8,187.52 |
| 135 | 2.3.1.2.1 | Evaluar los requerimientos |  | 2h | 2016-07-13 09:00 | 2016-07-13 11:00 |  | 0.75d | 0d | Analista | 2h | 236.8 |
| 136 | 2.3.1.2.2 | Actualizacion del SRS |  | 16h | 2016-07-13 11:00 | 2016-07-15 11:00 | 135 | 0.75d |  | Analista; Administrador de la configuracion; Administrador de proyectos; Asegurador de la calidad | 64h | 7,950.72 |
| 137 | 2.3.1.2.3 | Documentos: SRS y la evaluacion de los requerimientos | milestone, manual | 0d | 2016-07-13 09:00 | 2016-07-13 09:00 |  |  |  |  |  |  |

Notes:
- 115: Realizar pruebas por unidad
- 116: Realizar pruebas por modulo codificado
- 118: Realizar pruebas por unidad
- 119: Realizar pruebas por modulo codificado
- 121: Realizar pruebas por unidad
- 122: Realizar pruebas por modulo codificado
- 124: Realizar pruebas por unidad
- 125: Realizar pruebas por modulo codificado
- 130: Especificar como se lleva a cabo los procesos de la empresa
- 131: Requerimientos sobre la funcion de la aplicación
- 132: Requerimientos sobre la apariencia de la aplicación
- 135: Revision de los requerimientos más importantes
- 136: Acomodo de los requerimientos

| ID | WBS | Task | Type | Duration | Start | Finish | Predecessors | Total slack | Free slack | Constraint | Resources | Work | Cost |
| --- | --- | --- | --- | --- | --- | --- | --- | --- | --- | --- | --- | --- | --- |
| 138 | 2.3.1.3 | **Gestion de requerimientos** |  | 0.44d | 2016-07-18 09:00 | 2016-07-18 12:30 |  | 0.56d |  |  |  | 6.5h | 816.44 |
| 139 | 2.3.1.3.1 | Priorizar requerimientos |  | 1h | 2016-07-18 09:00 | 2016-07-18 10:00 | 135 | 0.56d | 0d | start no earlier than 2016-07-18 09:00 | Analista; Administrador de proyectos | 2h | 282.33 |
| 140 | 2.3.1.3.2 | Almacenar en repositorio |  | 0.5h | 2016-07-18 09:00 | 2016-07-18 09:30 |  | 0.94d |  | start no earlier than 2016-07-18 09:00 | Administrador de proyectos; Administrador de la configuracion | 1h | 135.99 |
| 141 | 2.3.1.3.3 | Asignar a desarrolladores de software |  | 2h | 2016-07-18 10:00 | 2016-07-18 12:00 | 139 | 0.56d | 0d | start no earlier than 2016-07-18 09:00 | Analista | 2h | 236.8 |
| 142 | 2.3.1.3.4 | Administración de cambios de requerimientos |  | 0.5h | 2016-07-18 12:00 | 2016-07-18 12:30 | 141 | 0.56d |  | start no earlier than 2016-07-18 09:00 | Administrador de la configuracion | 0.5h | 54.03 |
| 143 | 2.3.1.3.5 | Administracion de la trazabilidad de requerimientos |  | 0.5h | 2016-07-18 09:00 | 2016-07-18 09:30 | 11 | 0.94d |  | start no earlier than 2016-07-18 09:00 | Administrador de la configuracion; Asegurador de la calidad | 1h | 107.3 |
| 144 | 2.3.2 | **Planificación** |  | 4d | 2016-07-19 09:00 | 2016-07-22 19:00 |  |  |  |  |  | 46.08h | 5,636.93 |
| 145 | 2.3.2.1 | Actualizar plan del proecto |  | 1h | 2016-07-19 09:00 | 2016-07-19 10:00 |  | 18.88d |  | start no earlier than 2016-07-19 09:00 | Administrador de proyectos; Administrador de la configuracion; Asegurador de la calidad | 3h | 378.52 |
| 146 | 2.3.2.2 | **Estimación** |  | 2d | 2016-07-19 09:00 | 2016-07-20 19:00 |  |  |  |  |  | 13.08h | 1,688.89 |
| 147 | 2.3.2.2.1 | Actualizar WBS/calendario | manual | 0.13d | 2016-07-19 09:00 | 2016-07-19 10:02 |  |  |  |  | Administrador de proyectos; Administrador de la configuracion | 2.08h | 282.86 |
| 148 | 2.3.2.2.2 | Actualizar deccionario del WBS | manual | 3h | 2016-07-19 10:02 | 2016-07-19 15:02 | 147 |  |  |  | Administrador de proyectos; Administrador de la configuracion; Asegurador de la calidad | 9h | 1,135.56 |
| 149 | 2.3.2.2.3 | Actualizar los costos | manual | 1h | 2016-07-19 10:02 | 2016-07-19 11:02 | 147 |  |  |  | Administrador de proyectos; Asegurador de la calidad | 2h | 270.47 |
| 150 | 2.3.2.2.4 | Diccionario, calendario y costos | milestone, manual | 0d | 2016-07-19 09:00 | 2016-07-19 09:00 |  |  |  |  |  |  |  |
| 151 | 2.3.2.3 | **Riesgos** |  | 0.75d | 2016-07-21 09:00 | 2016-07-21 17:00 |  | 0d |  |  |  | 23h | 2,766.58 |
| 152 | 2.3.2.3.1 | Identificacion de los riesgos | manual | 2h | 2016-07-21 09:00 | 2016-07-21 11:00 |  |  |  |  | Analista; Programador; Administrador de la configuracion; Asegurador de la calidad | 8h | 873.98 |
| 153 | 2.3.2.3.2 | Asignación de prioridades | manual | 1h | 2016-07-21 11:00 | 2016-07-21 12:00 | 152 |  |  |  | Administrador de proyectos; Administrador de la configuracion; Asegurador de la calidad | 3h | 378.52 |
| 154 | 2.3.2.3.3 | Plan mitigación contingencia | manual | 4h | 2016-07-21 11:00 | 2016-07-21 17:00 | 152 |  |  |  | Administrador de proyectos; Administrador de la configuracion; Asegurador de la calidad | 12h | 1,514.08 |
| 155 | 2.3.2.4 | **Aseguramiento de la calidad** |  | 0.12d | 2016-07-22 09:00 | 2016-07-22 10:00 |  |  |  |  |  | 7h | 802.94 |
| 156 | 2.3.2.4.1 | Actualizar junta de arranque | manual | 1h | 2016-07-22 09:00 | 2016-07-22 10:00 |  |  |  |  | Administrador de proyectos; Administrador de la configuracion; Analista; Asegurador de la calidad; Diseñador; Programador; tester | 7h | 802.94 |
| 157 | 2.3.3 | **Diseño** |  | 4d | 2016-07-22 09:00 | 2016-07-27 19:00 |  |  |  |  |  | 20h | 1,894.5 |
| 158 | 2.3.3.1 | **Diagramas UML** |  | 2d | 2016-07-25 09:00 | 2016-07-26 19:00 |  |  |  |  |  | 17h | 1,616.58 |
| 159 | 2.3.3.1.1 | Actualizar diagrama de caso de uso |  | 4h | 2016-07-25 09:00 | 2016-07-25 13:00 |  | 1.25d | 0d | start no earlier than 2016-07-25 09:00 | Diseñador | 4h | 370.56 |
| 160 | 2.3.3.1.2 | Diagrama de secuencia |  | 2h | 2016-07-25 15:00 | 2016-07-25 17:00 | 159 | 1.25d |  |  | Diseñador | 2h | 185.28 |
| 161 | 2.3.3.1.3 | Actualizar diagrama de clases |  | 2h | 2016-07-25 09:00 | 2016-07-25 11:00 |  | 1.75d |  |  | Diseñador | 2h | 185.28 |
| 162 | 2.3.3.1.4 | Actualizar diagrama de componentes |  | 3h | 2016-07-26 09:00 | 2016-07-26 12:00 |  | 13.62d |  | start no earlier than 2016-07-26 09:00 | Diseñador; Asegurador de la calidad | 6h | 597.54 |
| 163 | 2.3.3.1.5 | Actualizar diagrama de despliegue |  | 3h | 2016-07-26 09:00 | 2016-07-26 12:00 |  | 13.62d |  | start no earlier than 2016-07-26 09:00 | Diseñador | 3h | 277.92 |
| 164 | 2.3.3.2 | Actualizar maquetación |  | 3h | 2016-07-27 09:00 | 2016-07-27 12:00 |  | 12.38d | 0.62d | start no earlier than 2016-07-27 09:00 | Diseñador | 3h | 277.92 |

Notes:
- 139: Crear una lista en escala de los requerimientos con mayor importancia a menor
- 140: Crear un respaldo de la informacion
- 141: Repartir al grupo de trabajo los requerimientos
- 142: Control de los cambios en cuanto a los requeriientos
- 143: Tener un buen manejo de los tiempos de cada tarea
- 145: Establecer formalmente el plan de proyecto
- 147: Establecer formalmente el WBS
- 148: Descripcion mejorada de las tareas
- 149: Establecer costos del proyecto
- 152: Generan lista de los posibles riesgos que pueden dar en el trayecto del proyecto
- 153: Crear lista de importancia de los riesgos
- 154: Crear plan de contingencia en caso de que ocurriese
- 156: Iniciacion del proyecto
- 159: Diagramas sobre el funcionamiento de la aplicion
- 160: Representacion en secuencia de lso casos de uso
- 161: Clases a crear
- 164: Bocetos de la aplicación

| ID | WBS | Task | Type | Duration | Start | Finish | Predecessors | Total slack | Free slack | Constraint | Resources | Work | Cost |
| --- | --- | --- | --- | --- | --- | --- | --- | --- | --- | --- | --- | --- | --- |
| 165 | 2.3.4 | **Codificación** |  | 17d | 2016-07-11 09:00 | 2016-08-02 19:00 |  | 8d |  |  |  | 38.1h | 3,962.4 |
| 166 | 2.3.4.1 | **Módulo de cajero** |  | 2d | 2016-07-28 09:00 | 2016-07-29 19:00 |  |  |  |  |  | 12.7h | 1,320.8 |
| 167 | 2.3.4.1.1 | Interfaz |  | 2h | 2016-07-28 09:00 | 2016-07-28 11:00 | 164 | 11.75d |  | start no earlier than 2016-07-28 09:00 | Programador | 2h | 208 |
| 168 | 2.3.4.1.2 | Clases de cajero |  | 6h | 2016-07-28 09:00 | 2016-07-28 17:00 |  | 1.25d |  |  | Programador | 6h | 624 |
| 169 | 2.3.4.1.3 | Conexión a BD |  | 0.5h | 2016-07-29 09:00 | 2016-07-29 09:30 | 65 | 0.56d | 0d | start no earlier than 2016-07-29 09:00 | Programador | 0.5h | 52 |
| 170 | 2.3.4.1.4 | Insertar cajero |  | 2h | 2016-07-29 09:30 | 2016-07-29 11:30 | 169 | 0.56d | 0d |  | Programador | 2h | 208 |
| 171 | 2.3.4.1.5 | Borrar cajero |  | 0.2h | 2016-07-29 11:30 | 2016-07-29 11:42 | 170 | 0.66d |  |  | Programador | 0.2h | 20.8 |
| 172 | 2.3.4.1.6 | Modificación de usuario |  | 0.5h | 2016-07-29 11:30 | 2016-07-29 12:00 | 170 | 0.62d |  |  | Programador | 0.5h | 52 |
| 173 | 2.3.4.1.7 | Consulta de cajero |  | 0.5h | 2016-07-29 11:30 | 2016-07-29 12:00 | 170 | 0.62d |  |  | Programador | 0.5h | 52 |
| 174 | 2.3.4.1.8 | Reporte de cajero |  | 1h | 2016-07-29 11:30 | 2016-07-29 12:30 | 170 | 0.56d |  |  | Programador | 1h | 104 |
| 175 | 2.3.4.1.9 | Codigo fuente del modulo cajero | milestone, manual | 0d | 2016-07-28 09:00 | 2016-07-28 09:00 |  |  |  |  |  |  |  |
| 176 | 2.3.4.2 | **Módulo de categorias** |  | 2d | 2016-08-01 09:00 | 2016-08-02 19:00 |  |  |  |  |  | 12.7h | 1,320.8 |
| 177 | 2.3.4.2.1 | Interfaz |  | 2h | 2016-08-01 09:00 | 2016-08-01 11:00 |  | 1.75d |  |  | Programador | 2h | 208 |
| 178 | 2.3.4.2.2 | Clases de categorias |  | 6h | 2016-08-01 09:00 | 2016-08-01 17:00 |  | 1.25d |  |  | Programador | 6h | 624 |
| 179 | 2.3.4.2.3 | Conexión a BD |  | 0.5h | 2016-08-02 09:00 | 2016-08-02 09:30 |  | 8.94d |  | start no earlier than 2016-08-02 09:00 | Programador | 0.5h | 52 |
| 180 | 2.3.4.2.4 | Insertar categoria |  | 2h | 2016-08-02 09:00 | 2016-08-02 11:00 |  | 8.75d |  | start no earlier than 2016-08-02 09:00 | Programador | 2h | 208 |
| 181 | 2.3.4.2.5 | Borrar categoria |  | 0.2h | 2016-08-02 09:00 | 2016-08-02 09:12 |  | 8.97d |  | start no earlier than 2016-08-02 09:00 | Programador | 0.2h | 20.8 |
| 182 | 2.3.4.2.6 | Modificación de categoria |  | 0.5h | 2016-08-02 09:00 | 2016-08-02 09:30 |  | 8.94d |  | start no earlier than 2016-08-02 09:00 | Programador | 0.5h | 52 |
| 183 | 2.3.4.2.7 | Consulta de categoria |  | 0.5h | 2016-08-02 09:00 | 2016-08-02 09:30 |  | 8.94d |  | start no earlier than 2016-08-02 09:00 | Programador | 0.5h | 52 |
| 184 | 2.3.4.2.8 | Reporte de categoria |  | 1h | 2016-08-02 09:00 | 2016-08-02 10:00 |  | 8.88d |  | start no earlier than 2016-08-02 09:00 | Programador | 1h | 104 |
| 185 | 2.3.4.2.9 | Codigo fuente del modulo categorias | milestone, manual | 0d | 2016-08-01 09:00 | 2016-08-01 09:00 |  |  |  |  |  |  |  |
| 186 | 2.3.4.3 | **Modulo de proveedores** |  | 0.75d | 2016-07-11 09:00 | 2016-07-11 17:00 |  | 17.25d |  |  |  | 12.7h | 1,320.8 |
| 187 | 2.3.4.3.1 | Interfaz |  | 2h | 2016-07-11 09:00 | 2016-07-11 11:00 |  | 17.75d |  |  | Programador | 2h | 208 |
| 188 | 2.3.4.3.2 | Clases de categorias |  | 6h | 2016-07-11 09:00 | 2016-07-11 17:00 |  | 17.25d |  |  | Programador | 6h | 624 |
| 189 | 2.3.4.3.3 | Conexión a BD |  | 0.5h | 2016-07-11 09:00 | 2016-07-11 09:30 |  | 17.94d |  |  | Programador | 0.5h | 52 |
| 190 | 2.3.4.3.4 | Insertar categoria |  | 2h | 2016-07-11 09:00 | 2016-07-11 11:00 |  | 17.75d |  |  | Programador | 2h | 208 |
| 191 | 2.3.4.3.5 | Borrar categoria |  | 0.2h | 2016-07-11 09:00 | 2016-07-11 09:12 |  | 17.98d |  |  | Programador | 0.2h | 20.8 |
| 192 | 2.3.4.3.6 | Modificación de categoria |  | 0.5h | 2016-07-11 09:00 | 2016-07-11 09:30 |  | 17.94d |  |  | Programador | 0.5h | 52 |
| 193 | 2.3.4.3.7 | Consulta de categoria |  | 0.5h | 2016-07-11 09:00 | 2016-07-11 09:30 |  | 17.94d |  |  | Programador | 0.5h | 52 |
| 194 | 2.3.4.3.8 | Reporte de categoria |  | 1h | 2016-07-11 09:00 | 2016-07-11 10:00 |  | 17.88d |  |  | Programador | 1h | 104 |

Notes:
- 167: Codificar la interfaz
- 168: Codificar las clases del modulo
- 169: Crear la conexión a la BD
- 170: Codigo para agregar
- 171: CodIgo para borrar
- 172: Codigo para modificar
- 173: Codigo para consultar
- 174: Codigo para generar reportes
- 177: Codificar la interfaz
- 178: Codificar las clases del modulo
- 179: Crear la conexión a la BD
- 180: Codigo para agregar
- 181: CodIgo para borrar
- 182: Codigo para modificar
- 183: Codigo para consultar
- 184: Codigo para generar reportes
- 187: Codificar la interfaz
- 188: Codificar las clases del modulo
- 189: Crear la conexión a la BD
- 190: Codigo para agregar
- 191: CodIgo para borrar
- 192: Codigo para modificar
- 193: Codigo para consultar
- 194: Codigo para generar reportes

| ID | WBS | Task | Type | Duration | Start | Finish | Predecessors | Total slack | Free slack | Resources | Work | Cost |
| --- | --- | --- | --- | --- | --- | --- | --- | --- | --- | --- | --- | --- |
| 195 | 2.3.5 | **Pruebas** |  | 1d | 2016-08-03 09:00 | 2016-08-03 19:00 |  |  |  |  | 12h | 1,312.56 |
| 196 | 2.3.5.1 | **Caja blanca** |  | 0.25d | 2016-08-03 09:00 | 2016-08-03 11:00 |  | 0d |  |  | 12h | 1,312.56 |
| 197 | 2.3.5.1.1 | **Modulo de cajero** |  | 0.25d | 2016-08-03 09:00 | 2016-08-03 11:00 |  | 0.75d |  |  | 4h | 437.52 |
| 198 | 2.3.5.1.1.1 | Pruebas unitarias |  | 2h | 2016-08-03 09:00 | 2016-08-03 11:00 | 166 | 0.75d |  | tester | 2h | 218.76 |
| 199 | 2.3.5.1.1.2 | Pruebas de modulo |  | 2h | 2016-08-03 09:00 | 2016-08-03 11:00 | 166 | 0.75d |  | tester | 2h | 218.76 |
| 200 | 2.3.5.1.2 | **Modulo de categoria** |  | 0.25d | 2016-08-03 09:00 | 2016-08-03 11:00 |  | 0.75d |  |  | 4h | 437.52 |
| 201 | 2.3.5.1.2.1 | Pruebas unitarias |  | 2h | 2016-08-03 09:00 | 2016-08-03 11:00 |  | 0.75d |  | tester | 2h | 218.76 |
| 202 | 2.3.5.1.2.2 | Pruebas de modulo |  | 2h | 2016-08-03 09:00 | 2016-08-03 11:00 |  | 0.75d |  | tester | 2h | 218.76 |
| 203 | 2.3.5.1.3 | **Modulo de proveedores** |  | 0.25d | 2016-08-03 09:00 | 2016-08-03 11:00 |  | 0d |  |  | 4h | 437.52 |
| 204 | 2.3.5.1.3.1 | Pruebas unitarias | manual | 2h | 2016-08-03 09:00 | 2016-08-03 11:00 |  |  |  | tester | 2h | 218.76 |
| 205 | 2.3.5.1.3.2 | Pruebas de modulo | manual | 2h | 2016-08-03 09:00 | 2016-08-03 11:00 |  |  |  | tester | 2h | 218.76 |
| 206 | 2.4 | **Implementacion** |  | 0.75d | 2016-05-31 09:00 | 2016-05-31 17:00 |  | 53.25d |  |  | 6h | 634.76 |
| 207 | 2.4.1 | Evaluacion del hosting |  | 2h | 2016-05-31 09:00 | 2016-05-31 11:00 |  | 53.25d | 0d | Programador | 2h | 208 |
| 208 | 2.4.2 | Implementar el sitio en el host |  | 2h | 2016-05-31 11:00 | 2016-05-31 13:00 | 207 | 53.25d | 0d | Programador | 2h | 208 |
| 209 | 2.4.3 | Pruebas de sistema |  | 1h | 2016-05-31 15:00 | 2016-05-31 16:00 | 208 | 53.25d | 0d | tester | 1h | 109.38 |
| 210 | 2.4.4 | Pruebas de rendimiento |  | 1h | 2016-05-31 16:00 | 2016-05-31 17:00 | 209 | 53.25d |  | tester | 1h | 109.38 |
| 211 | 2.5 | **Cierre de proyecto** |  | 1.25d | 2016-05-31 09:00 | 2016-06-01 11:00 |  | 0d |  |  | 22h | 2,857.39 |
| 212 | 2.5.1 | Carta de aceptacion |  | 1h | 2016-05-31 09:00 | 2016-05-31 10:00 |  | 52.75d | 0d | Administrador de proyectos | 1h | 163.93 |
| 213 | 2.5.2 | Acta de cierre de proyecto |  | 1h | 2016-05-31 10:00 | 2016-05-31 11:00 | 212 | 52.75d | 0d | Administrador de proyectos | 1h | 163.93 |
| 214 | 2.5.3 | Evaluacion de desempeño |  | 1h | 2016-05-31 11:00 | 2016-05-31 12:00 | 213 | 52.75d | 0d | Administrador de proyectos | 1h | 163.93 |
| 215 | 2.5.4 | Junta de lecciones aprendidas |  | 2h | 2016-05-31 12:00 | 2016-05-31 16:00 | 214 | 52.75d | 0d | Administrador de la configuracion; Administrador de proyectos; Analista; Asegurador de la calidad; Diseñador; Programador; tester | 14h | 1,605.88 |
| 216 | 2.5.5 | Revicion de adherencias |  | 1h | 2016-05-31 16:00 | 2016-05-31 17:00 | 215 | 52.75d | 0d | Programador | 1h | 104 |
| 217 | 2.5.6 | Liberacion de recursos |  | 1h | 2016-05-31 17:00 | 2016-05-31 18:00 | 216 | 52.75d | 0d | Administrador de proyectos | 1h | 163.93 |
| 218 | 2.5.7 | Informe final de proyecto |  | 3h | 2016-05-31 18:00 | 2016-06-01 11:00 | 217 | 52.75d |  | Administrador de proyectos | 3h | 491.79 |
| 219 | 2.5.8 | Carta de aceptacion, Acta de cierre de proyecto, lecciones aprendidas, evaluacion de desempeño, liberacion de recursos, informe final de proyecto | milestone, manual | 0d | 2016-05-31 09:00 | 2016-05-31 09:00 |  |  |  |  |  |  |

Notes:
- 198: Realizar pruebas por unidad
- 199: Realizar pruebas por modulo codificado
- 201: Realizar pruebas por unidad
- 202: Realizar pruebas por modulo codificado
- 204: Realizar pruebas por unidad
- 205: Realizar pruebas por modulo codificado
- 207: Seleccionar el hostin adecuado para subir el sitio
- 208: Subir el sitio web al hosting elegido
- 212: Docuemento que indica que el cliente quedo satisfecho con el proyecto
- 213: Acta que indica el cierre del proyecto
- 214: Se evalua el desempeño de los integrantes del proyecto
- 215: Junta en la cual se habla sobre lo que se aprendio durante el proyecto ya sea cosas buenas o malas
- 216: Revisar si el codigo puede se util para poderse utilizar en algun otro proyecto
- 217: Se liberan los recurso que se utilizaron en el proyecto
- 218: Documentacion de todo el proyecto

| ID | WBS | Task | Type | Duration | Start | Finish | Total slack | Constraint |
| --- | --- | --- | --- | --- | --- | --- | --- | --- |
| 222 | 3 | **Revisones** |  | 51d | 2016-06-03 09:00 | 2016-08-12 19:00 | 0d |  |
| 223 | 3.1 | 1 | manual | 1d | 2016-06-03 09:00 | 2016-06-03 19:00 |  | start no earlier than 2016-06-03 09:00 |
| 224 | 3.2 | 2 | manual | 1d | 2016-06-10 09:00 | 2016-06-10 19:00 |  | start no earlier than 2016-06-10 09:00 |
| 225 | 3.3 | 3 | manual | 1d | 2016-06-17 09:00 | 2016-06-17 19:00 |  | start no earlier than 2016-06-17 09:00 |
| 226 | 3.4 | 4 | manual | 1d | 2016-06-24 09:00 | 2016-06-24 19:00 |  | start no earlier than 2016-06-24 09:00 |
| 227 | 3.5 | 5 | manual | 1d | 2016-07-01 09:00 | 2016-07-01 19:00 |  | start no earlier than 2016-07-01 09:00 |
| 228 | 3.6 | 6 | manual | 1d | 2016-07-08 09:00 | 2016-07-08 19:00 |  | start no earlier than 2016-07-08 09:00 |
| 229 | 3.7 | 7 | manual | 1d | 2016-07-15 09:00 | 2016-07-15 19:00 |  | start no earlier than 2016-07-15 09:00 |
| 230 | 3.8 | 8 | manual | 1d | 2016-07-22 09:00 | 2016-07-22 19:00 |  | start no earlier than 2016-07-22 09:00 |
| 231 | 3.9 | 9 | manual | 1d | 2016-07-29 09:00 | 2016-07-29 19:00 |  | start no earlier than 2016-07-29 09:00 |
| 232 | 3.10 | 10 | manual | 1d | 2016-08-05 09:00 | 2016-08-05 19:00 |  | start no earlier than 2016-08-05 09:00 |
| 233 | 3.11 | 11 | manual | 1d | 2016-08-12 09:00 | 2016-08-12 19:00 |  | start no earlier than 2016-08-12 09:00 |
