Schedule from MS Project, 2016-05-02 to 2016-08-12, costs in $.

## Calendars

- Estándar: Mon-Fri 09:00-13:00, 15:00-19:00; Sat-Sun off.

## Resources

| Resource | Rate |
| --- | --- |
| ARM Administrador de proyectos | 145.95 |
| MATR Analista | 111.5 |
| MATR Diseñador | 114.21 |
| MBG Programador | 98.67 |
| ARM Tester | 111.95 |
| MBG Admin. De la config | 85.28 |
| JIHA Asegurador de la calidad | 104.12 |
| Cliente |  |
| Diseñador |  |
| Administrador de la configuracion |  |
| Asegurador de la calidad |  |
| Programador |  |
| tester |  |
| Administrador de proyectos |  |
| Analista |  |

## Schedule

| ID | WBS | Task | Type | Duration | Start | Finish | Predecessors | Total slack | Free slack | Constraint | Resources | Work | Cost |
| --- | --- | --- | --- | --- | --- | --- | --- | --- | --- | --- | --- | --- | --- |
| 1 | 1 | **Plan preeliminar** |  | 1.75d | 2016-05-02 09:00 | 2016-05-03 17:00 |  | 0d |  |  |  | 8h | 1,167.6 |
| 2 | 1.1 | Generar un WBS del producto inicial |  | 1h | 2016-05-02 09:00 | 2016-05-02 10:00 |  | 94.88d | 0d | start no earlier than 2016-05-02 09:00 | ARM Administrador de proyectos | 1h | 145.95 |
| 3 | 1.2 | Generar project charter |  | 1h | 2016-05-02 10:00 | 2016-05-02 11:00 | 2 | 73.88d | 0.75d | start no earlier than 2016-05-02 09:00 | ARM Administrador de proyectos | 1h | 145.95 |
| 4 | 1.3 | Plan preeliminar del proyecto |  | 6h | 2016-05-03 09:00 | 2016-05-03 17:00 | 3 | 94.12d | 19.25d | start no earlier than 2016-05-03 09:00 | ARM Administrador de proyectos | 6h | 875.7 |
| 5 | 1.4 | Documentos: WBS del producto inicial, project charter, plan preeliminar del proyecto | milestone, manual | 0d | 2016-05-02 09:00 | 2016-05-02 09:00 |  |  |  |  |  |  |  |
| 6 | 2 | **Nombre del proyecto** |  | 54d | 2016-05-31 09:00 | 2016-08-12 19:00 |  | 0d |  |  |  | 495.06h | 53,855.36 |
| 7 | 2.1 | Formación del equipo |  | 1h | 2016-05-31 09:00 | 2016-05-31 10:00 | 4 | 53.88d |  | start no earlier than 2016-05-31 09:00 | ARM Administrador de proyectos | 1h | 145.95 |
| 8 | 2.2 | **Fase UNO (Iteracion UNO)** |  | 25.25d | 2016-06-01 09:00 | 2016-07-06 11:00 |  | 6d |  |  |  | 235.38h | 26,915.78 |
| 9 | 2.2.1 | **Analisis** |  | 23d | 2016-06-01 09:00 | 2016-07-02 09:00 |  | 6d |  |  |  | 86.5h | 10,979.73 |
| 10 | 2.2.1.1 | **Elicitación** |  | 23d | 2016-06-01 09:00 | 2016-07-02 09:00 |  | 30d |  |  |  | 46h | 5,904.12 |
| 11 | 2.2.1.1.1 | Generar lista de proveeedores |  | 0.5h | 2016-06-01 09:00 | 2016-06-01 09:30 |  | 48.31d | 0d | start no earlier than 2016-06-01 09:00 | MATR Analista | 0.5h | 55.75 |
| 12 | 2.2.1.1.2 | Evaluar provedores de requerimientos |  | 0.5h | 2016-06-01 09:30 | 2016-06-01 10:00 | 11 | 48.31d | 0d | start no earlier than 2016-05-31 09:00 | MATR Analista | 0.5h | 55.75 |
| 13 | 2.2.1.1.3 | Definición de estrategia de recoleccion de datos |  | 4.5h | 2016-06-01 10:00 | 2016-06-01 16:30 | 12 | 48.31d | 0d | start no earlier than 2016-05-31 09:00 | ARM Administrador de proyectos; MATR Analista | 9h | 1,158.53 |
| 14 | 2.2.1.1.4 | Planear reuniones de licitacion |  | 2h | 2016-06-01 16:30 | 2016-06-01 18:30 | 13 | 48.31d | 0.06d | start no earlier than 2016-05-31 09:00 | ARM Administrador de proyectos; MATR Analista | 4h | 514.9 |
| 15 | 2.2.1.1.5 | Identificar procesos del sistema |  | 8h | 2016-06-02 09:00 | 2016-06-02 19:00 | 14 | 48.25d | 0d | finish no earlier than 2016-06-02 19:00 | ARM Administrador de proyectos; MATR Analista | 16h | 2,059.6 |
| 16 | 2.2.1.1.6 | Identificar requerimientos funcionales |  | 6h | 2016-06-03 09:00 | 2016-06-03 17:00 | 15 | 48.25d | 0d | start no earlier than 2016-06-03 09:00 | ARM Administrador de proyectos; MATR Analista | 12h | 1,544.7 |
| 17 | 2.2.1.1.7 | Identificar requerimientos no funcionales |  | 2h | 2016-06-03 17:00 | 2016-06-03 19:00 | 16 | 50d |  | start no earlier than 2016-05-31 09:00 | ARM Administrador de proyectos; MATR Analista | 4h | 514.9 |
| 18 | 2.2.1.1.8 | Requerimientos funcionales y no funcionales, estrategia de recoleccion de datos | milestone | 0d | 2016-07-02 09:00 | 2016-07-02 09:00 |  | 51d |  |  |  |  |  |
| 19 | 2.2.1.2 | **Espesificación** |  | 20.5d | 2016-06-03 15:00 | 2016-07-02 09:00 |  | 30d |  |  |  | 34h | 4,342.2 |
| 20 | 2.2.1.2.1 | Evaluar los requerimientos |  | 2h | 2016-06-03 15:00 | 2016-06-03 17:00 | 16FS-2h | 48.25d | 1.25d | start no earlier than 2016-06-03 09:00 | MATR Analista | 2h | 223 |
| 21 | 2.2.1.2.2 | SRS |  | 16h | 2016-06-07 09:00 | 2016-06-08 19:00 | 20 | 47d |  | start no earlier than 2016-06-07 09:00 | ARM Administrador de proyectos; MATR Analista | 32h | 4,119.2 |
| 22 | 2.2.1.2.3 | Documentos: SRS y la evaluacion de los requerimientos | milestone | 0d | 2016-07-02 09:00 | 2016-07-02 09:00 |  | 51d |  |  |  |  |  |
| 23 | 2.2.1.3 | **Gestion de requerimientos** |  | 0.38d | 2016-06-09 09:00 | 2016-06-09 12:00 |  | 0d |  |  |  | 6.5h | 733.4 |
| 24 | 2.2.1.3.1 | Priorizar requerimientos |  | 1h | 2016-06-09 09:00 | 2016-06-09 10:00 | 20 | 45.99d | 0d | start no earlier than 2016-06-09 09:00 | ARM Administrador de proyectos; MATR Analista | 2h | 257.45 |
| 25 | 2.2.1.3.2 | Almacenar en repositorio |  | 0.5h | 2016-06-09 10:00 | 2016-06-09 10:30 | 24 | 45.99d | 0d | start no earlier than 2016-06-09 09:00 | ARM Administrador de proyectos; MBG Admin. De la config | 1h | 115.61 |
| 26 | 2.2.1.3.3 | Asignar a desarrolladores de software |  | 2h | 2016-06-09 10:00 | 2016-06-09 12:00 | 24 | 46.62d |  | start no earlier than 2016-06-09 09:00 | MATR Analista | 2h | 223 |
| 27 | 2.2.1.3.4 | Administración de cambios de requerimientos |  | 0.5h | 2016-06-09 10:30 | 2016-06-09 11:00 | 25 | 45.99d | 0d | start no earlier than 2016-06-09 09:00 | MBG Admin. De la config | 0.5h | 42.64 |
| 28 | 2.2.1.3.5 | Administracion de la trazabilidad de requerimientos |  | 0.5h | 2016-06-09 10:30 | 2016-06-09 11:00 | 27FS-0.5h | 45.99d | 0.75d | start no earlier than 2016-06-09 09:00 | JIHA Asegurador de la calidad; MBG Admin. De la config | 1h | 94.7 |
| 29 | 2.2.1.3.6 | Administracion de los cambios, trazabilidad de requerimientos | milestone, manual | 0d | 2016-06-09 09:00 | 2016-06-09 09:00 |  |  |  |  |  |  |  |

Notes:
- 2: Generar WBS de referencia
- 3: Acta costitutiva que indica los involucrados
- 4: Plan de referencia
- 7: Se crea el quipo de trabajo del proyecto
- 11: Crear lista de las personas que proveeran la informacion necesaria
- 12: Calificar proeedores
- 13: Elegir una estrategia para obtener informacion para los requerimientos del sistema
- 14: Especificar en calendario las reuniones
- 15: Especificar como se lleva a cabo los procesos de la empresa
- 16: Requerimientos sobre la funcion de la aplicación
- 17: Requerimientos sobre la apariencia de la aplicación
- 20: Revision de los requerimientos más importantes
- 21: Acomodo de los requerimientos
- 24: Crear una lista en escala de los requerimientos con mayor importancia a menor
- 25: Crear un respaldo de la informacion
- 26: Repartir al grupo de trabajo los requerimientos
- 27: Control de los cambios en cuanto a los requeriientos
- 28: Tener un buen manejo de los tiempos de cada tarea

| ID | WBS | Task | Type | Duration | Start | Finish | Predecessors | Total slack | Free slack | Constraint | Resources | Work | Cost |
| --- | --- | --- | --- | --- | --- | --- | --- | --- | --- | --- | --- | --- | --- |
| 30 | 2.2.2 | **Planificación** |  | 16d | 2016-06-10 09:00 | 2016-07-02 09:00 |  | 30d |  |  |  | 41.58h | 4,725.27 |
| 31 | 2.2.2.1 | Definir el ciclo de vida |  | 0.5h | 2016-06-10 09:00 | 2016-06-10 09:30 | 28 | 45.24d | 0d | start no earlier than 2016-06-10 09:00 | MATR Analista; MBG Programador; ARM Administrador de proyectos; MBG Admin. De la config | 2h | 220.7 |
| 32 | 2.2.2.2 | Politicas del proyecto |  | 0.5h | 2016-06-10 09:30 | 2016-06-10 10:00 | 31 | 45.24d | 0d | start no earlier than 2016-06-10 09:00 | ARM Administrador de proyectos; JIHA Asegurador de la calidad; MBG Admin. De la config | 1.5h | 167.68 |
| 33 | 2.2.2.3 | Actualizar plan del proyecto |  | 1h | 2016-06-10 10:00 | 2016-06-10 11:00 | 32 | 45.24d | 0.75d | start no earlier than 2016-06-10 09:00 | ARM Administrador de proyectos; MBG Admin. De la config | 2h | 231.23 |
| 34 | 2.2.2.4 | Politicas del proyecto, plan de proyceto y ciclo de vida | milestone | 0d | 2016-07-02 09:00 | 2016-07-02 09:00 |  | 51d |  |  |  |  |  |
| 35 | 2.2.2.5 | **Estimación** |  | 15d | 2016-06-13 09:00 | 2016-07-02 09:00 |  | 30d |  |  |  | 13.08h | 1,496.6 |
| 36 | 2.2.2.5.1 | Actualizar WBS/calendario |  | 0.13d | 2016-06-13 09:00 | 2016-06-13 10:02 | 33 | 44.49d | 1.87d | start no earlier than 2016-06-13 09:00 | ARM Administrador de proyectos; MBG Admin. De la config | 2.08h | 240.48 |
| 37 | 2.2.2.5.2 | Deccionario del WBS |  | 3h | 2016-06-15 09:00 | 2016-06-15 12:00 | 36 | 42.62d |  | start no earlier than 2016-06-15 09:00 | ARM Administrador de proyectos; JIHA Asegurador de la calidad; MBG Admin. De la config | 9h | 1,006.05 |
| 38 | 2.2.2.5.3 | Costos |  | 1h | 2016-06-13 09:00 | 2016-06-13 10:00 | 33 | 65.88d |  | start no earlier than 2016-06-13 09:00 | ARM Administrador de proyectos; JIHA Asegurador de la calidad | 2h | 250.07 |
| 39 | 2.2.2.5.4 | Diccionario WBS y calendario | milestone | 0d | 2016-07-02 09:00 | 2016-07-02 09:00 |  | 51d |  |  |  |  |  |
| 40 | 2.2.2.6 | **Riesgos** |  | 13d | 2016-06-15 09:00 | 2016-07-02 09:00 |  | 30d |  |  |  | 10h | 1,166.69 |
| 41 | 2.2.2.6.1 | Identificacion de los riesgos |  | 2h | 2016-06-15 09:00 | 2016-06-15 11:00 |  | 42.25d | 0d | start no earlier than 2016-06-15 09:00 | ARM Administrador de proyectos; JIHA Asegurador de la calidad | 4h | 500.14 |
| 42 | 2.2.2.6.2 | Asignación de prioridades |  | 1h | 2016-06-15 11:00 | 2016-06-15 12:00 | 41 | 42.62d |  | start no earlier than 2016-06-15 09:00 | ARM Administrador de proyectos; JIHA Asegurador de la calidad | 2h | 250.07 |
| 43 | 2.2.2.6.3 | Plan mitigación contingencia |  | 4h | 2016-06-15 11:00 | 2016-06-15 17:00 | 41 | 42.25d |  | start no earlier than 2016-06-15 09:00 | JIHA Asegurador de la calidad | 4h | 416.48 |
| 44 | 2.2.2.6.4 | Plan de mitigacion y identificacion de riesgos | milestone | 0d | 2016-07-02 09:00 | 2016-07-02 09:00 |  | 51d |  |  |  |  |  |
| 45 | 2.2.2.7 | **Aseguramiento de la calidad** |  | 12d | 2016-06-16 09:00 | 2016-07-02 09:00 |  | 30d |  |  |  | 13h | 1,442.38 |
| 46 | 2.2.2.7.1 | Plan de gestión de la información |  | 2h | 2016-06-16 09:00 | 2016-06-16 11:00 |  | 41.12d | 0d | start no earlier than 2016-06-16 09:00 | JIHA Asegurador de la calidad; MBG Admin. De la config; ARM Administrador de proyectos | 6h | 670.7 |
| 47 | 2.2.2.7.2 | Junta de arranque |  | 1h | 2016-06-16 11:00 | 2016-06-16 12:00 | 46 | 41.12d | 2.62d | start no earlier than 2016-06-16 09:00 | ARM Administrador de proyectos; ARM Tester; JIHA Asegurador de la calidad; MATR Analista; MATR Diseñador; MBG Admin. De la config; MBG Programador | 7h | 771.68 |
| 48 | 2.2.2.7.3 | Plan de gestión de la información | milestone | 0d | 2016-07-02 09:00 | 2016-07-02 09:00 |  | 51d |  |  |  |  |  |
| 49 | 2.2.3 | **Diseño** |  | 9d | 2016-06-21 09:00 | 2016-07-02 09:00 |  | 30d |  |  |  | 30h | 3,317.99 |
| 50 | 2.2.3.1 | Definicón de la arquitectura |  | 2h | 2016-06-21 09:00 | 2016-06-21 11:00 | 47 | 38.5d | 0d | start no earlier than 2016-06-21 09:00 | MBG Admin. De la config; MATR Diseñador; JIHA Asegurador de la calidad | 6h | 607.22 |
| 51 | 2.2.3.2 | **Diagramas UML** |  | 1.38d | 2016-06-21 09:00 | 2016-06-22 12:00 |  | 37.62d |  |  |  | 17h | 1,911.3 |
| 52 | 2.2.3.2.1 | Diagrama de caso de uso |  | 4h | 2016-06-21 09:00 | 2016-06-21 13:00 |  | 38.5d | 0d | start no earlier than 2016-06-21 09:00 | MATR Diseñador | 4h | 456.84 |
| 53 | 2.2.3.2.2 | Diagrama de secuencia |  | 2h | 2016-06-21 11:00 | 2016-06-21 13:00 | 52FS-2h | 38.5d |  | start no earlier than 2016-06-21 09:00 | MATR Diseñador | 2h | 228.42 |
| 54 | 2.2.3.2.3 | Diagrama de clases |  | 2h | 2016-06-21 11:00 | 2016-06-21 13:00 | 50 | 38.5d |  | start no earlier than 2016-06-21 09:00 | MATR Diseñador | 2h | 228.42 |
| 55 | 2.2.3.2.4 | Diagrama de componentes |  | 3h | 2016-06-22 09:00 | 2016-06-22 12:00 |  | 37.62d |  | start no earlier than 2016-06-22 09:00 | MATR Diseñador; JIHA Asegurador de la calidad | 6h | 654.99 |
| 56 | 2.2.3.2.5 | Diagrama de despliegue |  | 3h | 2016-06-22 09:00 | 2016-06-22 12:00 |  | 37.62d |  | start no earlier than 2016-06-22 09:00 | MATR Diseñador | 3h | 342.63 |
| 57 | 2.2.3.3 | Mapa de navegación |  | 1h | 2016-06-22 09:00 | 2016-06-22 10:00 | 50 | 37.88d | 0d | start no earlier than 2016-06-22 09:00 | MATR Diseñador | 1h | 114.21 |
| 58 | 2.2.3.4 | Maquetación |  | 3h | 2016-06-21 10:00 | 2016-06-21 13:00 | 57FS-1d | 38d | 3.5d | start no earlier than 2016-06-21 09:00 | MATR Diseñador | 3h | 342.63 |
| 59 | 2.2.3.5 | Diagramas UML, mapa de navegacion y maquetacion | milestone | 0d | 2016-07-02 09:00 | 2016-07-02 09:00 |  | 51d |  |  |  |  |  |

Notes:
- 31: Elegir ciclo de vida adecuado para el proyecto
- 32: Establecer las reglas del proyecto
- 33: Establecer formalmente el plan de proyecto
- 36: Establecer formalmente el WBS
- 37: Descripcion mejorada de las tareas
- 38: Establecer costos del proyecto
- 41: Generan lista de los posibles riesgos que pueden dar en el trayecto del proyecto
- 42: Crear lista de importancia de los riesgos
- 43: Crear plan de contingencia en caso de que ocurriese
- 46: Como se estructurara la informacion
- 47: Iniciacion del proyecto
- 50: Elegir arquitectura a implementar
- 52: Diagramas sobre el funcionamiento de la aplicion
- 53: Representacion en secuencia de lso casos de uso
- 54: Clases a crear
- 57: Estructura de la aplicación
- 58: Bocetos de la aplicación

| ID | WBS | Task | Type | Duration | Start | Finish | Predecessors | Total slack | Free slack | Constraint | Resources | Work | Cost |
| --- | --- | --- | --- | --- | --- | --- | --- | --- | --- | --- | --- | --- | --- |
| 60 | 2.2.3.6 | **Diagramas de la BD** |  | 7d | 2016-06-23 09:00 | 2016-07-02 09:00 |  | 30d |  |  |  | 3h | 342.63 |
| 61 | 2.2.3.6.1 | Diagrama E-R |  | 2h | 2016-06-23 09:00 | 2016-06-23 11:00 |  | 36d | 0.75d | start no earlier than 2016-06-23 09:00 | MATR Diseñador | 2h | 228.42 |
| 62 | 2.2.3.6.2 | Diagrama relacional |  | 1h | 2016-06-23 09:00 | 2016-06-23 10:00 | 61FS-1d | 35.25d | 1.88d | start no earlier than 2016-06-23 09:00 | MATR Diseñador | 1h | 114.21 |
| 63 | 2.2.3.6.3 | Diagramas de la Base de datos | milestone | 0d | 2016-07-02 09:00 | 2016-07-02 09:00 |  | 51d |  | start no earlier than 2016-07-02 09:00 |  |  |  |
| 64 | 2.2.4 | **Codificación** |  | 5d | 2016-06-27 09:00 | 2016-07-02 09:00 |  | 30d |  |  |  | 57.3h | 5,653.79 |
| 65 | 2.2.4.1 | Codificación de la BD |  | 2h | 2016-06-27 09:00 | 2016-06-27 11:00 | 62 | 33.38d | 0d | start no earlier than 2016-06-27 09:00 | MBG Programador | 2h | 197.34 |
| 66 | 2.2.4.2 | Scrip de la base de datos | milestone | 0d | 2016-07-02 09:00 | 2016-07-02 09:00 |  | 51d |  |  |  |  |  |
| 67 | 2.2.4.3 | **Módulo de usuarios** |  | 5d | 2016-06-27 09:00 | 2016-07-02 09:00 |  | 29.75d | 2d |  |  | 12.7h | 1,253.11 |
| 68 | 2.2.4.3.1 | Interfaz |  | 2h | 2016-06-27 09:00 | 2016-06-27 11:00 | 58 | 34.5d |  | start no earlier than 2016-06-27 09:00 | MBG Programador | 2h | 197.34 |
| 69 | 2.2.4.3.2 | Clases de usuario |  | 6h | 2016-06-27 11:00 | 2016-06-27 19:00 | 65 | 33.38d | 0.06d | start no earlier than 2016-06-27 09:00 | MBG Programador | 6h | 592.02 |
| 70 | 2.2.4.3.3 | Conexión a BD |  | 0.5h | 2016-06-28 09:00 | 2016-06-28 09:30 | 69FS-0.5h | 33.31d | 0d | start no earlier than 2016-06-28 09:00 | MBG Programador | 0.5h | 49.34 |
| 71 | 2.2.4.3.4 | Insertar calzado |  | 2h | 2016-06-28 09:30 | 2016-06-28 11:30 | 70 | 33.31d | 0d | start no earlier than 2016-06-28 09:00 | MBG Programador | 2h | 197.34 |
| 72 | 2.2.4.3.5 | Borrar usuario |  | 0.2h | 2016-06-28 11:30 | 2016-06-28 11:42 | 71 | 33.41d |  | start no earlier than 2016-06-28 09:00 | MBG Programador | 0.2h | 19.73 |
| 73 | 2.2.4.3.6 | Modificación de usuario |  | 0.5h | 2016-06-28 11:30 | 2016-06-28 12:00 | 71 | 33.38d |  | start no earlier than 2016-06-28 09:00 | MBG Programador | 0.5h | 49.34 |
| 74 | 2.2.4.3.7 | Consulta de usuarios |  | 0.5h | 2016-06-28 11:30 | 2016-06-28 12:00 | 71 | 33.38d |  | start no earlier than 2016-06-28 09:00 | MBG Programador | 0.5h | 49.34 |
| 75 | 2.2.4.3.8 | Reporte de usuarios |  | 1h | 2016-06-28 11:30 | 2016-06-28 12:30 | 71 | 33.31d |  | start no earlier than 2016-06-28 09:00 | MBG Programador | 1h | 98.67 |
| 76 | 2.2.4.3.9 | Codigo fuente de modulo de usuarios | milestone | 0d | 2016-07-02 09:00 | 2016-07-02 09:00 |  | 50.75d |  |  |  |  |  |
| 77 | 2.2.4.4 | **Módulo de calzado** |  | 2d | 2016-06-30 09:00 | 2016-07-02 09:00 |  | 29.75d | 2d |  |  | 12.7h | 1,253.11 |
| 78 | 2.2.4.4.1 | Interfaz |  | 2h | 2016-06-30 09:00 | 2016-06-30 11:00 | 58 | 31.5d |  | start no earlier than 2016-06-30 09:00 | MBG Programador | 2h | 197.34 |
| 79 | 2.2.4.4.2 | Clases de calzado |  | 6h | 2016-06-30 09:00 | 2016-06-30 17:00 | 65 | 31d |  | start no earlier than 2016-06-30 09:00 | MBG Programador | 6h | 592.02 |
| 80 | 2.2.4.4.3 | Conexión a BD |  | 0.5h | 2016-07-01 09:00 | 2016-07-01 09:30 | 65FS-0.5h | 30.31d | 0d | start no earlier than 2016-07-01 09:00 | MBG Programador | 0.5h | 49.34 |
| 81 | 2.2.4.4.4 | Insertar calzado |  | 2h | 2016-07-01 09:30 | 2016-07-01 11:30 | 80 | 30.31d | 0d | start no earlier than 2016-07-01 09:00 | MBG Programador | 2h | 197.34 |
| 82 | 2.2.4.4.5 | Borrar calzado |  | 0.2h | 2016-07-01 11:30 | 2016-07-01 11:42 | 81 | 30.41d |  | start no earlier than 2016-07-01 09:00 | MBG Programador | 0.2h | 19.73 |
| 83 | 2.2.4.4.6 | Modificación de calzado |  | 0.5h | 2016-07-01 11:30 | 2016-07-01 12:00 | 81 | 30.38d |  | start no earlier than 2016-07-01 09:00 | MBG Programador | 0.5h | 49.34 |
| 84 | 2.2.4.4.7 | Consulta de calzado |  | 0.5h | 2016-07-01 11:30 | 2016-07-01 12:00 | 81 | 30.38d |  | start no earlier than 2016-07-01 09:00 | MBG Programador | 0.5h | 49.34 |
| 85 | 2.2.4.4.8 | Reporte de calzado |  | 1h | 2016-07-01 11:30 | 2016-07-01 12:30 | 81 | 30.31d |  | start no earlier than 2016-07-01 09:00 | MBG Programador | 1h | 98.67 |
| 86 | 2.2.4.4.9 | Codigo fuente de modulo de calzad | milestone | 0d | 2016-07-02 09:00 | 2016-07-02 09:00 |  | 50.75d |  | start no earlier than 2016-07-02 09:00 |  |  |  |

Notes:
- 61: Relaciones entre las tablas de la base de datos
- 62: Identificadores en la base de datos sobre las tablas y sus atributos
- 65: Crear la base de datos
- 68: Codificar la interfaz
- 69: Codificar las clases del modulo
- 70: Crear la conexión a la BD
- 71: Codigo para agregar
- 72: CodIgo para borrar
- 73: Codigo para modificar
- 74: Codigo para consultar
- 75: Codigo para generar reportes
- 78: Codificar la interfaz
- 79: Codificar las clases del modulo
- 80: Crear la conexión a la BD
- 81: Codigo para agregar
- 82: CodIgo para borrar
- 83: Codigo para modificar
- 84: Codigo para consultar
- 85: Codigo para generar reportes

| ID | WBS | Task | Duration | Start | Finish | Predecessors | Total slack | Free slack | Constraint | Resources | Work | Cost |
| --- | --- | --- | --- | --- | --- | --- | --- | --- | --- | --- | --- | --- |
| 87 | 2.2.4.5 | **Módulo de login** | 0.25d | 2016-06-27 09:00 | 2016-06-27 11:00 |  | 34.75d |  |  |  | 4.5h | 444.01 |
| 88 | 2.2.4.5.1 | Interfaz | 2h | 2016-06-27 09:00 | 2016-06-27 11:00 |  | 34.75d |  | start no earlier than 2016-06-27 09:00 | MBG Programador | 2h | 197.34 |
| 89 | 2.2.4.5.2 | Conexión a BD | 0.5h | 2016-06-27 09:00 | 2016-06-27 09:30 |  | 34.75d | 0d | start no earlier than 2016-06-27 09:00 | MBG Programador | 0.5h | 49.34 |
| 90 | 2.2.4.5.3 | Clase de login | 2h | 2016-06-27 09:00 | 2016-06-27 11:00 | 89FS-0.5h | 34.75d |  | start no earlier than 2016-06-27 09:00 | MBG Programador | 2h | 197.34 |
| 91 | 2.2.4.6 | **Módulo de venta** | 0.88d | 2016-06-27 09:00 | 2016-06-27 18:00 |  | 34.12d |  |  |  | 12.7h | 1,253.11 |
| 92 | 2.2.4.6.1 | Interfaz | 2h | 2016-06-27 09:00 | 2016-06-27 11:00 |  | 34.75d |  | start no earlier than 2016-06-27 09:00 | MBG Programador | 2h | 197.34 |
| 93 | 2.2.4.6.2 | Clases de venta | 6h | 2016-06-27 09:00 | 2016-06-27 17:00 |  | 34.12d | 0d | start no earlier than 2016-06-27 09:00 | MBG Programador | 6h | 592.02 |
| 94 | 2.2.4.6.3 | Conexión a BD | 0.5h | 2016-06-27 16:30 | 2016-06-27 17:00 | 93FS-0.5h | 34.25d |  | start no earlier than 2016-06-27 09:00 | MBG Programador | 0.5h | 49.34 |
| 95 | 2.2.4.6.4 | Insertar venta | 2h | 2016-06-27 09:00 | 2016-06-27 11:00 |  | 34.69d | 0d | start no earlier than 2016-06-27 09:00 | MBG Programador | 2h | 197.34 |
| 96 | 2.2.4.6.5 | Borrar venta | 0.2h | 2016-06-27 11:00 | 2016-06-27 11:12 | 95 | 34.73d |  | start no earlier than 2016-06-27 09:00 | MBG Programador | 0.2h | 19.73 |
| 97 | 2.2.4.6.6 | Modificación de venta | 0.5h | 2016-06-27 11:00 | 2016-06-27 11:30 | 95 | 34.69d |  | start no earlier than 2016-06-27 09:00 | MBG Programador | 0.5h | 49.34 |
| 98 | 2.2.4.6.7 | Consulta de venta | 0.5h | 2016-06-27 11:00 | 2016-06-27 11:30 | 95 | 34.69d |  | start no earlier than 2016-06-27 09:00 | MBG Programador | 0.5h | 49.34 |
| 99 | 2.2.4.6.8 | Reporte de venta | 1h | 2016-06-27 17:00 | 2016-06-27 18:00 | 93 | 34.12d |  | start no earlier than 2016-06-27 09:00 | MBG Programador | 1h | 98.67 |
| 100 | 2.2.4.7 | **Módulo de clientes** | 1.06d | 2016-06-27 09:00 | 2016-06-28 09:30 |  | 33.94d |  |  |  | 12.7h | 1,253.11 |
| 101 | 2.2.4.7.1 | Interfaz | 2h | 2016-06-27 09:00 | 2016-06-27 11:00 |  | 34.75d |  | start no earlier than 2016-06-27 09:00 | MBG Programador | 2h | 197.34 |
| 102 | 2.2.4.7.2 | Clases de cliente | 6h | 2016-06-27 09:00 | 2016-06-27 17:00 |  | 33.94d | 0d | start no earlier than 2016-06-27 09:00 | MBG Programador | 6h | 592.02 |
| 103 | 2.2.4.7.3 | Conexión a BD | 0.5h | 2016-06-27 16:30 | 2016-06-27 17:00 | 102FS-0.5h | 33.94d | 0d | start no earlier than 2016-06-27 09:00 | MBG Programador | 0.5h | 49.34 |
| 104 | 2.2.4.7.4 | Insertar cliente | 2h | 2016-06-27 17:00 | 2016-06-27 19:00 | 103 | 33.94d | 0d | start no earlier than 2016-06-27 09:00 | MBG Programador | 2h | 197.34 |
| 105 | 2.2.4.7.5 | Borrar cliente | 0.2h | 2016-06-28 09:00 | 2016-06-28 09:12 | 104 | 33.98d |  | start no earlier than 2016-06-27 09:00 | MBG Programador | 0.2h | 19.73 |
| 106 | 2.2.4.7.6 | Modificación de cliente | 0.5h | 2016-06-28 09:00 | 2016-06-28 09:30 | 104 | 33.94d |  | start no earlier than 2016-06-27 09:00 | MBG Programador | 0.5h | 49.34 |
| 107 | 2.2.4.7.7 | Consulta de cliente | 0.5h | 2016-06-28 09:00 | 2016-06-28 09:30 | 104 | 33.94d |  | start no earlier than 2016-06-27 09:00 | MBG Programador | 0.5h | 49.34 |
| 108 | 2.2.4.7.8 | Reporte de cliente | 1h | 2016-06-27 17:00 | 2016-06-27 18:00 | 103 | 34.12d |  | start no earlier than 2016-06-27 09:00 | MBG Programador | 1h | 98.67 |
| 109 | 2.2.5 | **Pruebas** | 2.25d | 2016-07-02 09:00 | 2016-07-06 11:00 |  | 27.75d |  |  |  | 20h | 2,239 |
| 110 | 2.2.5.1 | **Caja blanca** | 2.25d | 2016-07-02 09:00 | 2016-07-06 11:00 |  | 27.75d |  |  |  | 20h | 2,239 |
| 111 | 2.2.5.1.1 | **Modulo de usuarios** | 0.25d | 2016-07-06 09:00 | 2016-07-06 11:00 |  | 27.75d |  |  |  | 4h | 447.8 |
| 112 | 2.2.5.1.1.1 | Pruebas unitarias | 2h | 2016-07-06 09:00 | 2016-07-06 11:00 | 67 | 27.75d | 0d | start no earlier than 2016-07-06 09:00 | ARM Tester | 2h | 223.9 |
| 113 | 2.2.5.1.1.2 | Pruebas de modulo | 2h | 2016-07-06 09:00 | 2016-07-06 11:00 | 112FS-2h | 27.75d |  | start no earlier than 2016-07-06 09:00 | ARM Tester | 2h | 223.9 |

Notes:
- 88: Codificar la interfaz
- 89: Crear la conexión a la BD
- 90: Codificar las clases del modulo
- 92: Codificar la interfaz
- 93: Codificar las clases del modulo
- 94: Crear la conexión a la BD
- 95: Codigo para agregar
- 96: CodIgo para borrar
- 97: Codigo para modificar
- 98: Codigo para consultar
- 99: Codigo para generar reportes
- 101: Codificar la interfaz
- 102: Codificar las clases del modulo
- 103: Crear la conexión a la BD
- 104: Codigo para agregar
- 105: CodIgo para borrar
- 106: Codigo para modificar
- 107: Codigo para consultar
- 108: Codigo para generar reportes
- 112: Realizar pruebas por unidad
- 113: Realizar pruebas por modulo codificado

| ID | WBS | Task | Type | Duration | Start | Finish | Predecessors | Total slack | Free slack | Constraint | Resources | Work | Cost |
| --- | --- | --- | --- | --- | --- | --- | --- | --- | --- | --- | --- | --- | --- |
| 114 | 2.2.5.1.2 | **Modulo de calzado** |  | 0.25d | 2016-07-06 09:00 | 2016-07-06 11:00 |  | 27.75d |  |  |  | 4h | 447.8 |
| 115 | 2.2.5.1.2.1 | Pruebas unitarias |  | 2h | 2016-07-06 09:00 | 2016-07-06 11:00 | 77 | 27.75d | 0d | start no earlier than 2016-07-06 09:00 | ARM Tester | 2h | 223.9 |
| 116 | 2.2.5.1.2.2 | Pruebas de modulo |  | 2h | 2016-07-06 09:00 | 2016-07-06 11:00 | 115FS-2h | 27.75d |  | start no earlier than 2016-07-06 09:00 | ARM Tester | 2h | 223.9 |
| 117 | 2.2.5.1.3 | **Modulo de login** |  | 0.25d | 2016-07-04 09:00 | 2016-07-04 11:00 |  | 29.75d |  |  |  | 4h | 447.8 |
| 118 | 2.2.5.1.3.1 | Pruebas unitarias |  | 2h | 2016-07-04 09:00 | 2016-07-04 11:00 |  | 29.75d |  | start no earlier than 2016-07-02 09:00 | ARM Tester | 2h | 223.9 |
| 119 | 2.2.5.1.3.2 | Pruebas de modulo |  | 2h | 2016-07-04 09:00 | 2016-07-04 11:00 |  | 29.75d |  | start no earlier than 2016-07-02 09:00 | ARM Tester | 2h | 223.9 |
| 120 | 2.2.5.1.4 | **Modulo de venta** |  | 0.25d | 2016-07-04 09:00 | 2016-07-04 11:00 |  | 29.75d |  |  |  | 4h | 447.8 |
| 121 | 2.2.5.1.4.1 | Pruebas unitarias |  | 2h | 2016-07-04 09:00 | 2016-07-04 11:00 |  | 29.75d | 0d | start no earlier than 2016-07-02 09:00 | ARM Tester | 2h | 223.9 |
| 122 | 2.2.5.1.4.2 | Pruebas de modulo |  | 2h | 2016-07-04 09:00 | 2016-07-04 11:00 | 121FS-2h | 29.75d |  | start no earlier than 2016-07-02 09:00 | ARM Tester | 2h | 223.9 |
| 123 | 2.2.5.1.5 | **Modulo de clientes** |  | 0.25d | 2016-07-04 09:00 | 2016-07-04 11:00 |  | 29.75d |  |  |  | 4h | 447.8 |
| 124 | 2.2.5.1.5.1 | Pruebas unitarias |  | 2h | 2016-07-04 09:00 | 2016-07-04 11:00 |  | 29.75d | 0d | start no earlier than 2016-07-02 09:00 | ARM Tester | 2h | 223.9 |
| 125 | 2.2.5.1.5.2 | Pruebas de modulo |  | 2h | 2016-07-04 09:00 | 2016-07-04 11:00 | 124FS-2h | 29.75d |  | start no earlier than 2016-07-02 09:00 | ARM Tester | 2h | 223.9 |
| 126 | 2.2.5.1.6 | Reporte de prubas | milestone | 0d | 2016-07-02 09:00 | 2016-07-02 09:00 |  | 30d |  | start no earlier than 2016-07-02 09:00 | ARM Tester |  |  |
| 127 | 2.3 | **Fase DOS (Iteracion DOS)** |  | 22.25d | 2016-07-02 09:00 | 2016-08-03 11:00 |  | 7.75d |  |  |  | 230.68h | 23,511.36 |
| 128 | 2.3.1 | **Analisis** |  | 11d | 2016-07-02 09:00 | 2016-07-18 19:00 |  | 19d |  |  |  | 106.5h | 10,680.5 |
| 129 | 2.3.1.1 | **Elicitación** |  | 6.75d | 2016-07-02 09:00 | 2016-07-12 17:00 |  | 23.25d |  |  |  | 34h | 2,574.5 |
| 130 | 2.3.1.1.1 | Identificar procesos del sistema |  | 8h | 2016-07-11 09:00 | 2016-07-11 19:00 |  | 23.25d | 0d | finish no earlier than 2016-07-11 19:00 | MATR Analista; ARM Administrador de proyectos | 16h | 2,059.6 |
| 131 | 2.3.1.1.2 | Identificar requerimientos funcionales |  | 6h | 2016-07-12 09:00 | 2016-07-12 17:00 | 130 | 23.25d | 0.5d | start no earlier than 2016-07-12 09:00 | Analista; Administrador de proyectos | 12h |  |
| 132 | 2.3.1.1.3 | Identificar requerimientos no funcionales |  | 2h | 2016-07-12 09:00 | 2016-07-12 11:00 | 131SF-2h | 23.75d |  | start no earlier than 2016-07-12 09:00 | Cliente; ARM Administrador de proyectos; MATR Analista | 6h | 514.9 |
| 133 | 2.3.1.1.4 | Requerimientos funcionales y no funcionales | milestone | 0d | 2016-07-02 09:00 | 2016-07-02 09:00 |  | 51d |  |  |  |  |  |
| 134 | 2.3.1.2 | **Espesificación** |  | 11d | 2016-07-02 09:00 | 2016-07-18 19:00 |  | 19d |  |  |  | 66h | 7,372.6 |
| 135 | 2.3.1.2.1 | Evaluar los requerimientos |  | 2h | 2016-07-13 09:00 | 2016-07-13 11:00 |  | 20.75d | 1.75d | start no earlier than 2016-07-13 09:00 | MATR Analista | 2h | 223 |
| 136 | 2.3.1.2.2 | Actualizacion del SRS |  | 16h | 2016-07-15 09:00 | 2016-07-18 19:00 | 135 | 19d |  | start no earlier than 2016-07-15 09:00 | MBG Admin. De la config; MATR Analista; JIHA Asegurador de la calidad; ARM Administrador de proyectos | 64h | 7,149.6 |
| 137 | 2.3.1.2.3 | Documentos: SRS y la evaluacion de los requerimientos | milestone | 0d | 2016-07-02 09:00 | 2016-07-02 09:00 |  | 51d |  |  |  |  |  |

Notes:
- 115: Realizar pruebas por unidad
- 116: Realizar pruebas por modulo codificado
- 118: Realizar pruebas por unidad
- 119: Realizar pruebas por modulo codificado
- 121: Realizar pruebas por unidad
- 122: Realizar pruebas por modulo codificado
- 124: Realizar pruebas por unidad
- 125: Realizar pruebas por modulo codificado
- 130: Especificar como se lleva a cabo los procesos de la empresa
- 131: Requerimientos sobre la funcion de la aplicación
- 132: Requerimientos sobre la apariencia de la aplicación
- 135: Revision de los requerimientos más importantes
- 136: Acomodo de los requerimientos

| ID | WBS | Task | Type | Duration | Start | Finish | Predecessors | Total slack | Free slack | Constraint | Resources | Work | Cost |
| --- | --- | --- | --- | --- | --- | --- | --- | --- | --- | --- | --- | --- | --- |
| 138 | 2.3.1.3 | **Gestion de requerimientos** |  | 0.44d | 2016-07-18 09:00 | 2016-07-18 12:30 |  | 19.56d |  |  |  | 6.5h | 733.4 |
| 139 | 2.3.1.3.1 | Priorizar requerimientos |  | 1h | 2016-07-18 09:00 | 2016-07-18 10:00 | 135 | 19.56d | 0d | start no earlier than 2016-07-18 09:00 | MATR Analista; ARM Administrador de proyectos | 2h | 257.45 |
| 140 | 2.3.1.3.2 | Almacenar en repositorio |  | 0.5h | 2016-07-18 09:00 | 2016-07-18 09:30 |  | 19.94d |  | start no earlier than 2016-07-18 09:00 | MBG Admin. De la config; ARM Administrador de proyectos | 1h | 115.61 |
| 141 | 2.3.1.3.3 | Asignar a desarrolladores de software |  | 2h | 2016-07-18 10:00 | 2016-07-18 12:00 | 139 | 19.56d | 0d | start no earlier than 2016-07-18 09:00 | MATR Analista | 2h | 223 |
| 142 | 2.3.1.3.4 | Administración de cambios de requerimientos |  | 0.5h | 2016-07-18 12:00 | 2016-07-18 12:30 | 141 | 19.56d |  | start no earlier than 2016-07-18 09:00 | MBG Admin. De la config | 0.5h | 42.64 |
| 143 | 2.3.1.3.5 | Administracion de la trazabilidad de requerimientos |  | 0.5h | 2016-07-18 09:00 | 2016-07-18 09:30 | 11 | 19.94d |  | start no earlier than 2016-07-18 09:00 | MBG Admin. De la config; JIHA Asegurador de la calidad | 1h | 94.7 |
| 144 | 2.3.2 | **Planificación** |  | 14.12d | 2016-07-02 09:00 | 2016-07-22 10:00 |  | 15.88d |  |  |  | 54.08h | 5,474.2 |
| 145 | 2.3.2.1 | Actualizar plan del proecto |  | 1h | 2016-07-19 09:00 | 2016-07-19 10:00 |  | 18.88d |  | start no earlier than 2016-07-19 09:00 | MBG Admin. De la config; JIHA Asegurador de la calidad; ARM Administrador de proyectos | 3h | 335.35 |
| 146 | 2.3.2.2 | **Estimación** |  | 11.51d | 2016-07-02 09:00 | 2016-07-19 15:02 |  | 18.5d |  |  |  | 16.08h | 1,496.6 |
| 147 | 2.3.2.2.1 | Actualizar WBS/calendario |  | 0.13d | 2016-07-19 09:00 | 2016-07-19 10:02 |  | 18.5d | 0d | start no earlier than 2016-07-19 09:00 | MBG Admin. De la config; ARM Administrador de proyectos | 2.08h | 240.48 |
| 148 | 2.3.2.2.2 | Actualizar deccionario del WBS |  | 3h | 2016-07-19 10:02 | 2016-07-19 15:02 | 147 | 18.5d |  | start no earlier than 2016-07-19 09:00 | JIHA Asegurador de la calidad; ARM Administrador de proyectos; Asegurador de la calidad; MBG Admin. De la config | 12h | 1,006.05 |
| 149 | 2.3.2.2.3 | Actualizar los costos |  | 1h | 2016-07-19 10:02 | 2016-07-19 11:02 | 147 | 18.75d |  | start no earlier than 2016-07-19 09:00 | JIHA Asegurador de la calidad; ARM Administrador de proyectos | 2h | 250.07 |
| 150 | 2.3.2.2.4 | Diccionario, calendario y costos | milestone | 0d | 2016-07-02 09:00 | 2016-07-02 09:00 |  | 51d |  |  |  |  |  |
| 151 | 2.3.2.3 | **Riesgos** |  | 0.75d | 2016-07-21 09:00 | 2016-07-21 17:00 |  | 16.25d |  |  |  | 28h | 2,870.57 |
| 152 | 2.3.2.3.1 | Identificacion de los riesgos |  | 2h | 2016-07-21 09:00 | 2016-07-21 11:00 |  | 16.25d | 0d | start no earlier than 2016-07-21 09:00 | MBG Programador; MBG Admin. De la config; MATR Analista; JIHA Asegurador de la calidad | 8h | 799.14 |
| 153 | 2.3.2.3.2 | Asignación de prioridades |  | 1h | 2016-07-21 11:00 | 2016-07-21 12:00 | 152 | 16.62d |  | start no earlier than 2016-07-21 09:00 | JIHA Asegurador de la calidad; ARM Administrador de proyectos; Asegurador de la calidad; MBG Admin. De la config | 4h | 335.35 |
| 154 | 2.3.2.3.3 | Plan mitigación contingencia |  | 4h | 2016-07-21 11:00 | 2016-07-21 17:00 | 152 | 16.25d |  | start no earlier than 2016-07-21 09:00 | MBG Admin. De la config; JIHA Asegurador de la calidad; ARM Administrador de proyectos; MBG Programador | 16h | 1,736.08 |
| 155 | 2.3.2.4 | **Aseguramiento de la calidad** |  | 0.12d | 2016-07-22 09:00 | 2016-07-22 10:00 |  | 15.88d |  |  |  | 7h | 771.68 |
| 156 | 2.3.2.4.1 | Actualizar junta de arranque |  | 1h | 2016-07-22 09:00 | 2016-07-22 10:00 |  | 15.88d |  | start no earlier than 2016-07-22 09:00 | MBG Programador; MBG Admin. De la config; MATR Diseñador; MATR Analista; JIHA Asegurador de la calidad; ARM Tester; ARM Administrador de proyectos | 7h | 771.68 |
| 157 | 2.3.3 | **Diseño** |  | 2.38d | 2016-07-25 09:00 | 2016-07-27 12:00 |  | 12.62d |  |  |  | 20h | 2,253.93 |
| 158 | 2.3.3.1 | **Diagramas UML** |  | 1.38d | 2016-07-25 09:00 | 2016-07-26 12:00 |  | 13.62d |  |  |  | 17h | 1,911.3 |
| 159 | 2.3.3.1.1 | Actualizar diagrama de caso de uso |  | 4h | 2016-07-25 09:00 | 2016-07-25 13:00 |  | 14.5d | 0d | start no earlier than 2016-07-25 09:00 | MATR Diseñador | 4h | 456.84 |
| 160 | 2.3.3.1.2 | Diagrama de secuencia |  | 2h | 2016-07-25 11:00 | 2016-07-25 13:00 | 159FS-2h | 14.5d |  | start no earlier than 2016-07-25 09:00 | MATR Diseñador | 2h | 228.42 |
| 161 | 2.3.3.1.3 | Actualizar diagrama de clases |  | 2h | 2016-07-25 09:00 | 2016-07-25 11:00 |  | 14.38d | 0.75d | start no earlier than 2016-07-25 09:00 | MATR Diseñador | 2h | 228.42 |
| 162 | 2.3.3.1.4 | Actualizar diagrama de componentes |  | 3h | 2016-07-26 09:00 | 2016-07-26 12:00 | 161 | 13.62d |  | start no earlier than 2016-07-26 09:00 | MATR Diseñador; JIHA Asegurador de la calidad | 6h | 654.99 |
| 163 | 2.3.3.1.5 | Actualizar diagrama de despliegue |  | 3h | 2016-07-26 09:00 | 2016-07-26 12:00 |  | 13.62d |  | start no earlier than 2016-07-26 09:00 | MATR Diseñador | 3h | 342.63 |
| 164 | 2.3.3.2 | Actualizar maquetación |  | 3h | 2016-07-27 09:00 | 2016-07-27 12:00 |  | 12.12d | 0.62d | start no earlier than 2016-07-27 09:00 | MATR Diseñador | 3h | 342.63 |

Notes:
- 139: Crear una lista en escala de los requerimientos con mayor importancia a menor
- 140: Crear un respaldo de la informacion
- 141: Repartir al grupo de trabajo los requerimientos
- 142: Control de los cambios en cuanto a los requeriientos
- 143: Tener un buen manejo de los tiempos de cada tarea
- 145: Establecer formalmente el plan de proyecto
- 147: Establecer formalmente el WBS
- 148: Descripcion mejorada de las tareas
- 149: Establecer costos del proyecto
- 152: Generan lista de los posibles riesgos que pueden dar en el trayecto del proyecto
- 153: Crear lista de importancia de los riesgos
- 154: Crear plan de contingencia en caso de que ocurriese
- 156: Iniciacion del proyecto
- 159: Diagramas sobre el funcionamiento de la aplicion
- 160: Representacion en secuencia de lso casos de uso
- 161: Clases a crear
- 164: Bocetos de la aplicación

| ID | WBS | Task | Type | Duration | Start | Finish | Predecessors | Total slack | Free slack | Constraint | Resources | Work | Cost |
| --- | --- | --- | --- | --- | --- | --- | --- | --- | --- | --- | --- | --- | --- |
| 165 | 2.3.4 | **Codificación** |  | 21.31d | 2016-07-02 09:00 | 2016-08-02 11:30 |  | 8.69d |  |  |  | 38.1h | 3,759.33 |
| 166 | 2.3.4.1 | **Módulo de cajero** |  | 19.44d | 2016-07-02 09:00 | 2016-07-29 12:30 |  | 10.31d | 2.56d |  |  | 12.7h | 1,253.11 |
| 167 | 2.3.4.1.1 | Interfaz |  | 2h | 2016-07-28 09:00 | 2016-07-28 11:00 | 164 | 11.5d |  | start no earlier than 2016-07-28 09:00 | MBG Programador | 2h | 197.34 |
| 168 | 2.3.4.1.2 | Clases de cajero |  | 6h | 2016-07-28 09:00 | 2016-07-28 17:00 |  | 10.62d | 0.31d | start no earlier than 2016-07-28 09:00 | MBG Programador | 6h | 592.02 |
| 169 | 2.3.4.1.3 | Conexión a BD |  | 0.5h | 2016-07-29 09:00 | 2016-07-29 09:30 | 168FS-0.5h | 10.31d | 0d | start no earlier than 2016-07-29 09:00 | MBG Programador | 0.5h | 49.34 |
| 170 | 2.3.4.1.4 | Insertar cajero |  | 2h | 2016-07-29 09:30 | 2016-07-29 11:30 | 169 | 10.31d | 0d | start no earlier than 2016-07-29 09:00 | MBG Programador | 2h | 197.34 |
| 171 | 2.3.4.1.5 | Borrar cajero |  | 0.2h | 2016-07-29 11:30 | 2016-07-29 11:42 | 170 | 10.41d |  | start no earlier than 2016-07-29 09:00 | MBG Programador | 0.2h | 19.73 |
| 172 | 2.3.4.1.6 | Modificación de usuario |  | 0.5h | 2016-07-29 11:30 | 2016-07-29 12:00 | 170 | 10.38d |  | start no earlier than 2016-07-29 09:00 | MBG Programador | 0.5h | 49.34 |
| 173 | 2.3.4.1.7 | Consulta de cajero |  | 0.5h | 2016-07-29 11:30 | 2016-07-29 12:00 | 170 | 10.38d |  | start no earlier than 2016-07-29 09:00 | MBG Programador | 0.5h | 49.34 |
| 174 | 2.3.4.1.8 | Reporte de cajero |  | 1h | 2016-07-29 11:30 | 2016-07-29 12:30 | 170 | 10.31d |  | start no earlier than 2016-07-29 09:00 | MBG Programador | 1h | 98.67 |
| 175 | 2.3.4.1.9 | Codigo fuente del modulo cajero | milestone | 0d | 2016-07-02 09:00 | 2016-07-02 09:00 |  | 50.75d |  |  |  |  |  |
| 176 | 2.3.4.2 | **Módulo de categorias** |  | 21.31d | 2016-07-02 09:00 | 2016-08-02 11:30 |  | 8.69d |  |  |  | 12.7h | 1,253.11 |
| 177 | 2.3.4.2.1 | Interfaz |  | 2h | 2016-08-01 09:00 | 2016-08-01 11:00 |  | 9.75d |  | start no earlier than 2016-08-01 09:00 | MBG Programador | 2h | 197.34 |
| 178 | 2.3.4.2.2 | Clases de categorias |  | 6h | 2016-08-01 09:00 | 2016-08-01 17:00 |  | 9d | 0.31d | start no earlier than 2016-08-01 09:00 | MBG Programador | 6h | 592.02 |
| 179 | 2.3.4.2.3 | Conexión a BD |  | 0.5h | 2016-08-02 09:00 | 2016-08-02 09:30 | 178FS-0.5h | 8.69d | 0d | start no earlier than 2016-08-02 09:00 | MBG Programador | 0.5h | 49.34 |
| 180 | 2.3.4.2.4 | Insertar categoria |  | 2h | 2016-08-02 09:30 | 2016-08-02 11:30 | 179 | 8.69d |  | start no earlier than 2016-08-02 09:00 | MBG Programador | 2h | 197.34 |
| 181 | 2.3.4.2.5 | Borrar categoria |  | 0.2h | 2016-08-02 09:30 | 2016-08-02 09:42 | 179 | 8.91d |  | start no earlier than 2016-08-02 09:00 | MBG Programador | 0.2h | 19.73 |
| 182 | 2.3.4.2.6 | Modificación de categoria |  | 0.5h | 2016-08-02 09:30 | 2016-08-02 10:00 | 179 | 8.88d |  | start no earlier than 2016-08-02 09:00 | MBG Programador | 0.5h | 49.34 |
| 183 | 2.3.4.2.7 | Consulta de categoria |  | 0.5h | 2016-08-02 09:30 | 2016-08-02 10:00 | 179 | 8.88d |  | start no earlier than 2016-08-02 09:00 | MBG Programador | 0.5h | 49.34 |
| 184 | 2.3.4.2.8 | Reporte de categoria |  | 1h | 2016-08-02 09:30 | 2016-08-02 10:30 | 179 | 8.81d |  | start no earlier than 2016-08-02 09:00 | MBG Programador | 1h | 98.67 |
| 185 | 2.3.4.2.9 | Codigo fuente del modulo categorias | milestone | 0d | 2016-07-02 09:00 | 2016-07-02 09:00 |  | 51d |  |  |  |  |  |
| 186 | 2.3.4.3 | **Modulo de proveedores** |  | 1d | 2016-07-11 09:00 | 2016-07-11 19:00 |  | 24d |  |  |  | 12.7h | 1,253.11 |
| 187 | 2.3.4.3.1 | Interfaz |  | 2h | 2016-07-11 09:00 | 2016-07-11 11:00 |  | 24.75d |  | start no earlier than 2016-07-11 09:00 | MBG Programador | 2h | 197.34 |
| 188 | 2.3.4.3.2 | Clases de categorias |  | 6h | 2016-07-11 09:00 | 2016-07-11 17:00 |  | 24d | 0d | start no earlier than 2016-07-11 09:00 | MBG Programador | 6h | 592.02 |
| 189 | 2.3.4.3.3 | Conexión a BD |  | 0.5h | 2016-07-11 16:30 | 2016-07-11 17:00 | 188FS-0.5h | 24d | 0d | start no earlier than 2016-07-11 09:00 | MBG Programador | 0.5h | 49.34 |
| 190 | 2.3.4.3.4 | Insertar categoria |  | 2h | 2016-07-11 17:00 | 2016-07-11 19:00 | 189 | 24d |  | start no earlier than 2016-07-11 09:00 | MBG Programador | 2h | 197.34 |
| 191 | 2.3.4.3.5 | Borrar categoria |  | 0.2h | 2016-07-11 17:00 | 2016-07-11 17:12 | 189 | 24.23d |  | start no earlier than 2016-07-11 09:00 | MBG Programador | 0.2h | 19.73 |
| 192 | 2.3.4.3.6 | Modificación de categoria |  | 0.5h | 2016-07-11 17:00 | 2016-07-11 17:30 | 189 | 24.19d |  | start no earlier than 2016-07-11 09:00 | MBG Programador | 0.5h | 49.34 |
| 193 | 2.3.4.3.7 | Consulta de categoria |  | 0.5h | 2016-07-11 17:00 | 2016-07-11 17:30 | 189 | 24.19d |  | start no earlier than 2016-07-11 09:00 | MBG Programador | 0.5h | 49.34 |
| 194 | 2.3.4.3.8 | Reporte de categoria |  | 1h | 2016-07-11 17:00 | 2016-07-11 18:00 | 189 | 24.12d |  | start no earlier than 2016-07-11 09:00 | MBG Programador | 1h | 98.67 |

Notes:
- 167: Codificar la interfaz
- 168: Codificar las clases del modulo
- 169: Crear la conexión a la BD
- 170: Codigo para agregar
- 171: CodIgo para borrar
- 172: Codigo para modificar
- 173: Codigo para consultar
- 174: Codigo para generar reportes
- 177: Codificar la interfaz
- 178: Codificar las clases del modulo
- 179: Crear la conexión a la BD
- 180: Codigo para agregar
- 181: CodIgo para borrar
- 182: Codigo para modificar
- 183: Codigo para consultar
- 184: Codigo para generar reportes
- 187: Codificar la interfaz
- 188: Codificar las clases del modulo
- 189: Crear la conexión a la BD
- 190: Codigo para agregar
- 191: CodIgo para borrar
- 192: Codigo para modificar
- 193: Codigo para consultar
- 194: Codigo para generar reportes

| ID | WBS | Task | Type | Duration | Start | Finish | Predecessors | Total slack | Free slack | Constraint | Resources | Work | Cost |
| --- | --- | --- | --- | --- | --- | --- | --- | --- | --- | --- | --- | --- | --- |
| 195 | 2.3.5 | **Pruebas** |  | 22.25d | 2016-07-04 09:00 | 2016-08-03 11:00 |  | 7.75d |  |  |  | 12h | 1,343.4 |
| 196 | 2.3.5.1 | **Caja blanca** |  | 22.25d | 2016-07-04 09:00 | 2016-08-03 11:00 |  | 7.75d |  |  |  | 12h | 1,343.4 |
| 197 | 2.3.5.1.1 | **Modulo de cajero** |  | 0.25d | 2016-08-03 09:00 | 2016-08-03 11:00 |  | 7.75d |  |  |  | 4h | 447.8 |
| 198 | 2.3.5.1.1.1 | Pruebas unitarias |  | 2h | 2016-08-03 09:00 | 2016-08-03 11:00 | 166 | 7.75d | 0.25d | start no earlier than 2016-08-03 09:00 | ARM Tester | 2h | 223.9 |
| 199 | 2.3.5.1.1.2 | Pruebas de modulo |  | 2h | 2016-08-03 09:00 | 2016-08-03 11:00 | 198SS-2h | 7.75d |  | start no earlier than 2016-08-03 09:00 | ARM Tester | 2h | 223.9 |
| 200 | 2.3.5.1.2 | **Modulo de categoria** |  | 0.25d | 2016-08-03 09:00 | 2016-08-03 11:00 |  | 7.75d |  |  |  | 4h | 447.8 |
| 201 | 2.3.5.1.2.1 | Pruebas unitarias |  | 2h | 2016-08-03 09:00 | 2016-08-03 11:00 |  | 7.75d | 0.5d | start no earlier than 2016-08-03 09:00 | ARM Tester | 2h | 223.9 |
| 202 | 2.3.5.1.2.2 | Pruebas de modulo |  | 2h | 2016-08-03 09:00 | 2016-08-03 11:00 | 201SF-2h | 7.75d |  | start no earlier than 2016-08-03 09:00 | ARM Tester | 2h | 223.9 |
| 203 | 2.3.5.1.3 | **Modulo de proveedores** |  | 0.25d | 2016-07-04 09:00 | 2016-07-04 11:00 |  | 29.75d |  |  |  | 4h | 447.8 |
| 204 | 2.3.5.1.3.1 | Pruebas unitarias |  | 2h | 2016-07-04 09:00 | 2016-07-04 11:00 |  | 29.75d | 0.5d | start no earlier than 2016-07-02 09:00 | ARM Tester | 2h | 223.9 |
| 205 | 2.3.5.1.3.2 | Pruebas de modulo |  | 2h | 2016-07-04 09:00 | 2016-07-04 11:00 | 204SF-2h | 29.75d |  | start no earlier than 2016-07-02 09:00 | ARM Tester | 2h | 223.9 |
| 206 | 2.4 | **Implementacion** |  | 0.75d | 2016-05-31 09:00 | 2016-05-31 17:00 |  | 53.25d |  |  |  | 6h | 618.58 |
| 207 | 2.4.1 | Evaluacion del hosting |  | 2h | 2016-05-31 09:00 | 2016-05-31 11:00 |  | 53.25d | 0d | start no earlier than 2016-05-31 09:00 | MBG Programador | 2h | 197.34 |
| 208 | 2.4.2 | Implementar el sitio en el host |  | 2h | 2016-05-31 11:00 | 2016-05-31 13:00 | 207 | 53.25d | 0d | start no earlier than 2016-05-31 09:00 | MBG Programador | 2h | 197.34 |
| 209 | 2.4.3 | Pruebas de sistema |  | 1h | 2016-05-31 15:00 | 2016-05-31 16:00 | 208 | 53.25d | 0d | start no earlier than 2016-05-31 09:00 | ARM Tester | 1h | 111.95 |
| 210 | 2.4.4 | Pruebas de rendimiento |  | 1h | 2016-05-31 16:00 | 2016-05-31 17:00 | 209 | 53.25d |  | start no earlier than 2016-05-31 09:00 | ARM Tester | 1h | 111.95 |
| 211 | 2.5 | **Cierre de proyecto** |  | 54d | 2016-05-31 09:00 | 2016-08-12 19:00 |  | 0d |  |  |  | 22h | 2,663.68 |
| 212 | 2.5.1 | Carta de aceptacion |  | 1h | 2016-05-31 09:00 | 2016-05-31 10:00 |  | 52.75d | 0d | start no earlier than 2016-05-31 09:00 | ARM Administrador de proyectos | 1h | 145.95 |
| 213 | 2.5.2 | Acta de cierre de proyecto |  | 1h | 2016-05-31 10:00 | 2016-05-31 11:00 | 212 | 52.75d | 0d | start no earlier than 2016-05-31 09:00 | ARM Administrador de proyectos | 1h | 145.95 |
| 214 | 2.5.3 | Evaluacion de desempeño |  | 1h | 2016-05-31 11:00 | 2016-05-31 12:00 | 213 | 52.75d | 0d | start no earlier than 2016-05-31 09:00 | ARM Administrador de proyectos | 1h | 145.95 |
| 215 | 2.5.4 | Junta de lecciones aprendidas |  | 2h | 2016-05-31 12:00 | 2016-05-31 16:00 | 214 | 52.75d | 0d | start no earlier than 2016-05-31 09:00 | MBG Programador; MBG Admin. De la config; MATR Diseñador; MATR Analista; JIHA Asegurador de la calidad; ARM Tester; ARM Administrador de proyectos | 14h | 1,543.36 |
| 216 | 2.5.5 | Revicion de adherencias |  | 1h | 2016-05-31 16:00 | 2016-05-31 17:00 | 215 | 52.75d | 0d | start no earlier than 2016-05-31 09:00 | MBG Programador | 1h | 98.67 |
| 217 | 2.5.6 | Liberacion de recursos |  | 1h | 2016-05-31 17:00 | 2016-05-31 18:00 | 216 | 52.75d |  | start no earlier than 2016-05-31 09:00 | ARM Administrador de proyectos | 1h | 145.95 |
| 218 | 2.5.7 | Informe final de proyecto |  | 3h | 2016-08-12 16:00 | 2016-08-12 19:00 | 217 | 0d |  | finish no earlier than 2016-08-12 19:00 | ARM Administrador de proyectos | 3h | 437.85 |
| 219 | 2.5.8 | Carta de aceptacion, Acta de cierre de proyecto, lecciones aprendidas, evaluacion de desempeño, liberacion de recursos, informe final de proyecto | milestone | 0d | 2016-07-02 09:00 | 2016-07-02 09:00 |  | 51d |  |  |  |  |  |

Notes:
- 198: Realizar pruebas por unidad
- 199: Realizar pruebas por modulo codificado
- 201: Realizar pruebas por unidad
- 202: Realizar pruebas por modulo codificado
- 204: Realizar pruebas por unidad
- 205: Realizar pruebas por modulo codificado
- 207: Seleccionar el hostin adecuado para subir el sitio
- 208: Subir el sitio web al hosting elegido
- 212: Docuemento que indica que el cliente quedo satisfecho con el proyecto
- 213: Acta que indica el cierre del proyecto
- 214: Se evalua el desempeño de los integrantes del proyecto
- 215: Junta en la cual se habla sobre lo que se aprendio durante el proyecto ya sea cosas buenas o malas
- 216: Revisar si el codigo puede se util para poderse utilizar en algun otro proyecto
- 217: Se liberan los recurso que se utilizaron en el proyecto
- 218: Documentacion de todo el proyecto

| ID | WBS | Task | Type | Duration | Start | Finish | Total slack | Constraint |
| --- | --- | --- | --- | --- | --- | --- | --- | --- |
| 226 | 2.5.9 | **Revisones** |  | 51d | 2016-06-03 09:00 | 2016-08-12 19:00 | 0d |  |
| 227 | 2.5.9.1 | 1 | manual | 1d | 2016-06-03 09:00 | 2016-06-03 19:00 |  | start no earlier than 2016-06-03 09:00 |
| 228 | 2.5.9.2 | 2 | manual | 1d | 2016-06-10 09:00 | 2016-06-10 19:00 |  | start no earlier than 2016-06-10 09:00 |
| 229 | 2.5.9.3 | 3 | manual | 1d | 2016-06-17 09:00 | 2016-06-17 19:00 |  | start no earlier than 2016-06-17 09:00 |
| 230 | 2.5.9.4 | 4 | manual | 1d | 2016-06-24 09:00 | 2016-06-24 19:00 |  | start no earlier than 2016-06-24 09:00 |
| 231 | 2.5.9.5 | 5 | manual | 1d | 2016-07-01 09:00 | 2016-07-01 19:00 |  | start no earlier than 2016-07-01 09:00 |
| 232 | 2.5.9.6 | 6 | manual | 1d | 2016-07-08 09:00 | 2016-07-08 19:00 |  | start no earlier than 2016-07-08 09:00 |
| 233 | 2.5.9.7 | 7 | manual | 1d | 2016-07-15 09:00 | 2016-07-15 19:00 |  | start no earlier than 2016-07-15 09:00 |
| 234 | 2.5.9.8 | 8 | manual | 1d | 2016-07-22 09:00 | 2016-07-22 19:00 |  | start no earlier than 2016-07-22 09:00 |
| 235 | 2.5.9.9 | 9 | manual | 1d | 2016-07-29 09:00 | 2016-07-29 19:00 |  | start no earlier than 2016-07-29 09:00 |
| 236 | 2.5.9.10 | 10 | manual | 1d | 2016-08-05 09:00 | 2016-08-05 19:00 |  | start no earlier than 2016-08-05 09:00 |
| 237 | 2.5.9.11 | 11 | manual | 1d | 2016-08-12 09:00 | 2016-08-12 19:00 |  | start no earlier than 2016-08-12 09:00 |
